# Plan de intervenciones — Escenario FP90 (sin caldera 90%, con caldera 99.0%)

Schedule from MS Project XML, 2026-07-01 to 2030-01-19.

## Calendars

- Calendario continuo (7 días): Mon-Sun 08:00-12:00, 13:00-17:00.

## Schedule

| ID | WBS | Task | Duration | Start | Finish | Predecessors | Constraint | Unidad | Caldera | Código | Estado | Atraso heredado | Horas al ejecutar | Intervalo (h) | % intervalo |
| --- | --- | --- | --- | --- | --- | --- | --- | --- | --- | --- | --- | --- | --- | --- | --- |
| 1 | 1 | **Plan de intervenciones — Escenario FP90 (sin caldera 90%, con caldera 99.0%)** | 1299d | 2026-07-01 | 2030-01-19 |  |  |  |  |  |  |  |  |  |  |
| 2 | 1.1 | **Año 2026** | 199d | 2026-07-01 | 2027-01-15 |  |  |  |  |  |  |  |  |  |  |
| 3 | 1.1.1 | **Evento 1 — U9 (LC, 12K, TC, MB)** | 23d | 2026-07-01 | 2026-07-23 |  |  | U9 | Sí |  |  |  |  |  |  |
| 4 | 1.1.1.1 | LC — Lavado caldera | 23d | 2026-07-01 | 2026-07-23 |  | start no earlier than 2026-07-01 | U9 | Sí | LC | Adelantado | No | 1150 | 1500 | 76.67 |
| 5 | 1.1.1.2 | 12K — Mantenimiento 12k (OVH) | 23d | 2026-07-01 | 2026-07-23 |  | start no earlier than 2026-07-01 | U9 | Sí | 12K | En ventana ±10% | No | 13109 | 12000 | 109.24 |
| 6 | 1.1.1.3 | TC — Mantto. turbocargadores | 23d | 2026-07-01 | 2026-07-23 |  | start no earlier than 2026-07-01 | U9 | Sí | TC | En ventana ±10% | No | 13107 | 12000 | 109.22 |
| 7 | 1.1.1.4 | MB — Cojinetes de bancada MB | 23d | 2026-07-01 | 2026-07-23 |  | start no earlier than 2026-07-01 | U9 | Sí | MB | Atraso heredado | Sí | 27045 | 24000 | 112.69 |
| 8 | 1.1.2 | **Evento 2 — U13 (3K)** | 4d | 2026-07-24 | 2026-07-27 |  |  | U13 | No |  |  |  |  |  |  |
| 9 | 1.1.2.1 | 3K — Mantenimiento 3k | 4d | 2026-07-24 | 2026-07-27 | 4 | start no earlier than 2026-07-24 | U13 | No | 3K | Atraso heredado | Sí | 4500 | 3000 | 150 |
| 10 | 1.1.3 | **Evento 3 — U15 (LC)** | 2d | 2026-07-28 | 2026-07-29 |  |  | U15 | Sí |  |  |  |  |  |  |
| 11 | 1.1.3.1 | LC — Lavado caldera | 2d | 2026-07-28 | 2026-07-29 | 9 | start no earlier than 2026-07-28 | U15 | Sí | LC | En ventana ±10% | No | 1487 | 1500 | 99.13 |
| 12 | 1.1.4 | **Evento 4 — U7 (6K, BEB, MB, 3K)** | 14d | 2026-07-30 | 2026-08-12 |  |  | U7 | Sí |  |  |  |  |  |  |
| 13 | 1.1.4.1 | 6K — Mantenimiento 6k | 14d | 2026-07-30 | 2026-08-12 | 11 | start no earlier than 2026-07-30 | U7 | Sí | 6K | Fuera de ventana | No | 7034 | 6000 | 117.23 |
| 14 | 1.1.4.2 | BEB — Horas BEB | 14d | 2026-07-30 | 2026-08-12 | 11 | start no earlier than 2026-07-30 | U7 | Sí | BEB | Atraso heredado | Sí | 14046 | 12000 | 117.05 |
| 15 | 1.1.4.3 | MB — Cojinetes de bancada MB | 14d | 2026-07-30 | 2026-08-12 | 11 | start no earlier than 2026-07-30 | U7 | Sí | MB | Atraso heredado | Sí | 36957 | 24000 | 153.99 |
| 16 | 1.1.4.4 | 3K — Mantenimiento 3k | 14d | 2026-07-30 | 2026-08-12 | 11 | start no earlier than 2026-07-30 | U7 | Sí | 3K | Atraso heredado | Sí | 4004 | 3000 | 133.47 |
| 17 | 1.1.5 | **Evento 5 — U8 (LC, MB)** | 8d | 2026-08-13 | 2026-08-20 |  |  | U8 | Sí |  |  |  |  |  |  |
| 18 | 1.1.5.1 | LC — Lavado caldera | 8d | 2026-08-13 | 2026-08-20 | 13 | start no earlier than 2026-08-13 | U8 | Sí | LC | En ventana ±10% | No | 1426 | 1500 | 95.07 |
| 19 | 1.1.5.2 | MB — Cojinetes de bancada MB | 8d | 2026-08-13 | 2026-08-20 | 13 | start no earlier than 2026-08-13 | U8 | Sí | MB | Atraso heredado | Sí | 39999 | 24000 | 166.66 |
| 20 | 1.1.6 | **Evento 6 — U14 (3K)** | 4d | 2026-08-21 | 2026-08-24 |  |  | U14 | No |  |  |  |  |  |  |
| 21 | 1.1.6.1 | 3K — Mantenimiento 3k | 4d | 2026-08-21 | 2026-08-24 | 18 | start no earlier than 2026-08-21 | U14 | No | 3K | En ventana ±10% | No | 3120 | 3000 | 104 |
| 22 | 1.1.7 | **Evento 7 — U10 (LC, 12K, TC, BEB, MB, 6K, 3K)** | 23d | 2026-08-25 | 2026-09-16 |  |  | U10 | Sí |  |  |  |  |  |  |
| 23 | 1.1.7.1 | LC — Lavado caldera | 23d | 2026-08-25 | 2026-09-16 | 21 | start no earlier than 2026-08-25 | U10 | Sí | LC | En ventana ±10% | No | 1562 | 1500 | 104.13 |
| 24 | 1.1.7.2 | 12K — Mantenimiento 12k (OVH) | 23d | 2026-08-25 | 2026-09-16 | 21 | start no earlier than 2026-08-25 | U10 | Sí | 12K | Atraso heredado | Sí | 17907 | 12000 | 149.22 |
| 25 | 1.1.7.3 | TC — Mantto. turbocargadores | 23d | 2026-08-25 | 2026-09-16 | 21 | start no earlier than 2026-08-25 | U10 | Sí | TC | Atraso heredado | Sí | 17907 | 12000 | 149.22 |
| 26 | 1.1.7.4 | BEB — Horas BEB | 23d | 2026-08-25 | 2026-09-16 | 21 | start no earlier than 2026-08-25 | U10 | Sí | BEB | En ventana ±10% | No | 11078 | 12000 | 92.32 |
| 27 | 1.1.7.5 | MB — Cojinetes de bancada MB | 23d | 2026-08-25 | 2026-09-16 | 21 | start no earlier than 2026-08-25 | U10 | Sí | MB | Atraso heredado | Sí | 34570 | 24000 | 144.04 |
| 28 | 1.1.7.6 | 6K — Mantenimiento 6k | 23d | 2026-08-25 | 2026-09-16 | 21 | start no earlier than 2026-08-25 | U10 | Sí | 6K | Atraso heredado | Sí | 11084 | 6000 | 184.73 |
| 29 | 1.1.7.7 | 3K — Mantenimiento 3k | 23d | 2026-08-25 | 2026-09-16 | 21 | start no earlier than 2026-08-25 | U10 | Sí | 3K | Atraso heredado | Sí | 4694 | 3000 | 156.47 |

Notes:
- 3: Unidad U9 · Caldera: Sí · 23 días de salida (01/07/2026 – 23/07/2026)
- 8: Unidad U13 · Caldera: No · 4 días de salida (24/07/2026 – 27/07/2026)
- 10: Unidad U15 · Caldera: Sí · 2 días de salida (28/07/2026 – 29/07/2026)
- 12: Unidad U7 · Caldera: Sí · 14 días de salida (30/07/2026 – 12/08/2026)
- 17: Unidad U8 · Caldera: Sí · 8 días de salida (13/08/2026 – 20/08/2026)
- 20: Unidad U14 · Caldera: No · 4 días de salida (21/08/2026 – 24/08/2026)
- 22: Unidad U10 · Caldera: Sí · 23 días de salida (25/08/2026 – 16/09/2026)

| ID | WBS | Task | Duration | Start | Finish | Predecessors | Constraint | Unidad | Caldera | Código | Estado | Atraso heredado | Horas al ejecutar | Intervalo (h) | % intervalo |
| --- | --- | --- | --- | --- | --- | --- | --- | --- | --- | --- | --- | --- | --- | --- | --- |
| 30 | 1.1.8 | **Evento 8 — U7 (LC)** | 2d | 2026-09-17 | 2026-09-18 |  |  | U7 | Sí |  |  |  |  |  |  |
| 31 | 1.1.8.1 | LC — Lavado caldera | 2d | 2026-09-17 | 2026-09-18 | 23 | start no earlier than 2026-09-17 | U7 | Sí | LC | En ventana ±10% | No | 1569 | 1500 | 104.6 |
| 32 | 1.1.9 | **Evento 9 — U2 (LC, 12K, TC, MB, 6K, 3K)** | 23d | 2026-09-19 | 2026-10-11 |  |  | U2 | Sí |  |  |  |  |  |  |
| 33 | 1.1.9.1 | LC — Lavado caldera | 23d | 2026-09-19 | 2026-10-11 | 31 | start no earlier than 2026-09-19 | U2 | Sí | LC | Fuera de ventana | No | 2917 | 1500 | 194.47 |
| 34 | 1.1.9.2 | 12K — Mantenimiento 12k (OVH) | 23d | 2026-09-19 | 2026-10-11 | 31 | start no earlier than 2026-09-19 | U2 | Sí | 12K | Atraso heredado | Sí | 15795 | 12000 | 131.62 |
| 35 | 1.1.9.3 | TC — Mantto. turbocargadores | 23d | 2026-09-19 | 2026-10-11 | 31 | start no earlier than 2026-09-19 | U2 | Sí | TC | Atraso heredado | Sí | 15795 | 12000 | 131.62 |
| 36 | 1.1.9.4 | MB — Cojinetes de bancada MB | 23d | 2026-09-19 | 2026-10-11 | 31 | start no earlier than 2026-09-19 | U2 | Sí | MB | Atraso heredado | Sí | 31967 | 24000 | 133.2 |
| 37 | 1.1.9.5 | 6K — Mantenimiento 6k | 23d | 2026-09-19 | 2026-10-11 | 31 | start no earlier than 2026-09-19 | U2 | Sí | 6K | Atraso heredado | Sí | 9583 | 6000 | 159.72 |
| 38 | 1.1.9.6 | 3K — Mantenimiento 3k | 23d | 2026-09-19 | 2026-10-11 | 31 | start no earlier than 2026-09-19 | U2 | Sí | 3K | Atraso heredado | Sí | 6678 | 3000 | 222.6 |
| 39 | 1.1.10 | **Evento 10 — U9 (LC)** | 2d | 2026-10-12 | 2026-10-13 |  |  | U9 | Sí |  |  |  |  |  |  |
| 40 | 1.1.10.1 | LC — Lavado caldera | 2d | 2026-10-12 | 2026-10-13 | 33 | start no earlier than 2026-10-12 | U9 | Sí | LC | Fuera de ventana | No | 1901 | 1500 | 126.73 |
| 41 | 1.1.11 | **Evento 11 — U16 (12K, TC, MB, 6K, 3K)** | 23d | 2026-10-14 | 2026-11-05 |  |  | U16 | No |  |  |  |  |  |  |
| 42 | 1.1.11.1 | 12K — Mantenimiento 12k (OVH) | 23d | 2026-10-14 | 2026-11-05 | 40 | start no earlier than 2026-10-14 | U16 | No | 12K | Fuera de ventana | No | 14297 | 12000 | 119.14 |
| 43 | 1.1.11.2 | TC — Mantto. turbocargadores | 23d | 2026-10-14 | 2026-11-05 | 40 | start no earlier than 2026-10-14 | U16 | No | TC | Fuera de ventana | No | 14297 | 12000 | 119.14 |
| 44 | 1.1.11.3 | MB — Cojinetes de bancada MB | 23d | 2026-10-14 | 2026-11-05 | 40 | start no earlier than 2026-10-14 | U16 | No | MB | Atraso heredado | Sí | 29294 | 24000 | 122.06 |
| 45 | 1.1.11.4 | 6K — Mantenimiento 6k | 23d | 2026-10-14 | 2026-11-05 | 40 | start no earlier than 2026-10-14 | U16 | No | 6K | Fuera de ventana | No | 8110 | 6000 | 135.17 |
| 46 | 1.1.11.5 | 3K — Mantenimiento 3k | 23d | 2026-10-14 | 2026-11-05 | 40 | start no earlier than 2026-10-14 | U16 | No | 3K | Fuera de ventana | No | 4697 | 3000 | 156.57 |
| 47 | 1.1.12 | **Evento 12 — U4 (12K, TC, BEB, 6K, 3K)** | 23d | 2026-11-06 | 2026-11-28 |  |  | U4 | No |  |  |  |  |  |  |
| 48 | 1.1.12.1 | 12K — Mantenimiento 12k (OVH) | 23d | 2026-11-06 | 2026-11-28 | 42 | start no earlier than 2026-11-06 | U4 | No | 12K | Atraso heredado | Sí | 16584 | 12000 | 138.2 |
| 49 | 1.1.12.2 | TC — Mantto. turbocargadores | 23d | 2026-11-06 | 2026-11-28 | 42 | start no earlier than 2026-11-06 | U4 | No | TC | Atraso heredado | Sí | 16584 | 12000 | 138.2 |
| 50 | 1.1.12.3 | BEB — Horas BEB | 23d | 2026-11-06 | 2026-11-28 | 42 | start no earlier than 2026-11-06 | U4 | No | BEB | Adelantado | No | 10492 | 12000 | 87.43 |
| 51 | 1.1.12.4 | 6K — Mantenimiento 6k | 23d | 2026-11-06 | 2026-11-28 | 42 | start no earlier than 2026-11-06 | U4 | No | 6K | Atraso heredado | Sí | 11049 | 6000 | 184.15 |
| 52 | 1.1.12.5 | 3K — Mantenimiento 3k | 23d | 2026-11-06 | 2026-11-28 | 42 | start no earlier than 2026-11-06 | U4 | No | 3K | Fuera de ventana | No | 4436 | 3000 | 147.87 |
| 53 | 1.1.13 | **Evento 13 — U10 (LC)** | 2d | 2026-11-29 | 2026-11-30 |  |  | U10 | Sí |  |  |  |  |  |  |
| 54 | 1.1.13.1 | LC — Lavado caldera | 2d | 2026-11-29 | 2026-11-30 | 48 | start no earlier than 2026-11-29 | U10 | Sí | LC | Fuera de ventana | No | 1734 | 1500 | 115.6 |

Notes:
- 30: Unidad U7 · Caldera: Sí · 2 días de salida (17/09/2026 – 18/09/2026)
- 32: Unidad U2 · Caldera: Sí · 23 días de salida (19/09/2026 – 11/10/2026)
- 39: Unidad U9 · Caldera: Sí · 2 días de salida (12/10/2026 – 13/10/2026)
- 41: Unidad U16 · Caldera: No · 23 días de salida (14/10/2026 – 05/11/2026)
- 47: Unidad U4 · Caldera: No · 23 días de salida (06/11/2026 – 28/11/2026)
- 53: Unidad U10 · Caldera: Sí · 2 días de salida (29/11/2026 – 30/11/2026)

| ID | WBS | Task | Duration | Start | Finish | Predecessors | Constraint | Unidad | Caldera | Código | Estado | Atraso heredado | Horas al ejecutar | Intervalo (h) | % intervalo |
| --- | --- | --- | --- | --- | --- | --- | --- | --- | --- | --- | --- | --- | --- | --- | --- |
| 55 | 1.1.14 | **Evento 14 — U8 (LC, 12K, TC, BEB, 3K)** | 23d | 2026-12-01 | 2026-12-23 |  |  | U8 | Sí |  |  |  |  |  |  |
| 56 | 1.1.14.1 | LC — Lavado caldera | 23d | 2026-12-01 | 2026-12-23 | 54 | start no earlier than 2026-12-01 | U8 | Sí | LC | Fuera de ventana | No | 2424 | 1500 | 161.6 |
| 57 | 1.1.14.2 | 12K — Mantenimiento 12k (OVH) | 23d | 2026-12-01 | 2026-12-23 | 54 | start no earlier than 2026-12-01 | U8 | Sí | 12K | En ventana ±10% | No | 10998 | 12000 | 91.65 |
| 58 | 1.1.14.3 | TC — Mantto. turbocargadores | 23d | 2026-12-01 | 2026-12-23 | 54 | start no earlier than 2026-12-01 | U8 | Sí | TC | En ventana ±10% | No | 12635 | 12000 | 105.29 |
| 59 | 1.1.14.4 | BEB — Horas BEB | 23d | 2026-12-01 | 2026-12-23 | 54 | start no earlier than 2026-12-01 | U8 | Sí | BEB | En ventana ±10% | No | 13044 | 12000 | 108.7 |
| 60 | 1.1.14.5 | 3K — Mantenimiento 3k | 23d | 2026-12-01 | 2026-12-23 | 54 | start no earlier than 2026-12-01 | U8 | Sí | 3K | Fuera de ventana | No | 3849 | 3000 | 128.3 |
| 61 | 1.1.15 | **Evento 15 — U12 (12K, TC, BEB, 6K, 3K)** | 23d | 2026-12-24 | 2027-01-15 |  |  | U12 | No |  |  |  |  |  |  |
| 62 | 1.1.15.1 | 12K — Mantenimiento 12k (OVH) | 23d | 2026-12-24 | 2027-01-15 | 56 | start no earlier than 2026-12-24 | U12 | No | 12K | Fuera de ventana | No | 14058 | 12000 | 117.15 |
| 63 | 1.1.15.2 | TC — Mantto. turbocargadores | 23d | 2026-12-24 | 2027-01-15 | 56 | start no earlier than 2026-12-24 | U12 | No | TC | Fuera de ventana | No | 14058 | 12000 | 117.15 |
| 64 | 1.1.15.3 | BEB — Horas BEB | 23d | 2026-12-24 | 2027-01-15 | 56 | start no earlier than 2026-12-24 | U12 | No | BEB | Fuera de ventana | No | 14058 | 12000 | 117.15 |
| 65 | 1.1.15.4 | 6K — Mantenimiento 6k | 23d | 2026-12-24 | 2027-01-15 | 56 | start no earlier than 2026-12-24 | U12 | No | 6K | Fuera de ventana | No | 7143 | 6000 | 119.05 |
| 66 | 1.1.15.5 | 3K — Mantenimiento 3k | 23d | 2026-12-24 | 2027-01-15 | 56 | start no earlier than 2026-12-24 | U12 | No | 3K | Atraso heredado | Sí | 7143 | 3000 | 238.1 |
| 67 | 1.2 | **Año 2027** | 351d | 2027-01-16 | 2028-01-01 |  |  |  |  |  |  |  |  |  |  |
| 68 | 1.2.1 | **Evento 16 — U2 (LC)** | 2d | 2027-01-16 | 2027-01-17 |  |  | U2 | Sí |  |  |  |  |  |  |
| 69 | 1.2.1.1 | LC — Lavado caldera | 2d | 2027-01-16 | 2027-01-17 | 62 | start no earlier than 2027-01-16 | U2 | Sí | LC | Fuera de ventana | No | 2281 | 1500 | 152.07 |
| 70 | 1.2.2 | **Evento 17 — U1 (12K, TC, BEB, MB, 3K)** | 23d | 2027-01-18 | 2027-02-09 |  |  | U1 | No |  |  |  |  |  |  |
| 71 | 1.2.2.1 | 12K — Mantenimiento 12k (OVH) | 23d | 2027-01-18 | 2027-02-09 | 69 | start no earlier than 2027-01-18 | U1 | No | 12K | En ventana ±10% | No | 12520 | 12000 | 104.33 |
| 72 | 1.2.2.2 | TC — Mantto. turbocargadores | 23d | 2027-01-18 | 2027-02-09 | 69 | start no earlier than 2027-01-18 | U1 | No | TC | En ventana ±10% | No | 12520 | 12000 | 104.33 |
| 73 | 1.2.2.3 | BEB — Horas BEB | 23d | 2027-01-18 | 2027-02-09 | 69 | start no earlier than 2027-01-18 | U1 | No | BEB | En ventana ±10% | No | 12520 | 12000 | 104.33 |
| 74 | 1.2.2.4 | MB — Cojinetes de bancada MB | 23d | 2027-01-18 | 2027-02-09 | 69 | start no earlier than 2027-01-18 | U1 | No | MB | Fuera de ventana | No | 27895 | 24000 | 116.23 |
| 75 | 1.2.2.5 | 3K — Mantenimiento 3k | 23d | 2027-01-18 | 2027-02-09 | 69 | start no earlier than 2027-01-18 | U1 | No | 3K | Fuera de ventana | No | 6126 | 3000 | 204.2 |
| 76 | 1.2.3 | **Evento 18 — U15 (LC, 6K, BEB, 3K)** | 12d | 2027-02-10 | 2027-02-21 |  |  | U15 | Sí |  |  |  |  |  |  |
| 77 | 1.2.3.1 | LC — Lavado caldera | 12d | 2027-02-10 | 2027-02-21 | 71 | start no earlier than 2027-02-10 | U15 | Sí | LC | Fuera de ventana | No | 4633 | 1500 | 308.87 |
| 78 | 1.2.3.2 | 6K — Mantenimiento 6k | 12d | 2027-02-10 | 2027-02-21 | 71 | start no earlier than 2027-02-10 | U15 | Sí | 6K | En ventana ±10% | No | 6120 | 6000 | 102 |
| 79 | 1.2.3.3 | BEB — Horas BEB | 12d | 2027-02-10 | 2027-02-21 | 71 | start no earlier than 2027-02-10 | U15 | Sí | BEB | Fuera de ventana | No | 13547 | 12000 | 112.89 |
| 80 | 1.2.3.4 | 3K — Mantenimiento 3k | 12d | 2027-02-10 | 2027-02-21 | 71 | start no earlier than 2027-02-10 | U15 | Sí | 3K | Fuera de ventana | No | 6120 | 3000 | 204 |

Notes:
- 55: Unidad U8 · Caldera: Sí · 23 días de salida (01/12/2026 – 23/12/2026)
- 61: Unidad U12 · Caldera: No · 23 días de salida (24/12/2026 – 15/01/2027)
- 68: Unidad U2 · Caldera: Sí · 2 días de salida (16/01/2027 – 17/01/2027)
- 70: Unidad U1 · Caldera: No · 23 días de salida (18/01/2027 – 09/02/2027)
- 76: Unidad U15 · Caldera: Sí · 12 días de salida (10/02/2027 – 21/02/2027)

| ID | WBS | Task | Duration | Start | Finish | Predecessors | Constraint | Unidad | Caldera | Código | Estado | Atraso heredado | Horas al ejecutar | Intervalo (h) | % intervalo |
| --- | --- | --- | --- | --- | --- | --- | --- | --- | --- | --- | --- | --- | --- | --- | --- |
| 81 | 1.2.4 | **Evento 19 — U2 (3K)** | 4d | 2027-02-22 | 2027-02-25 |  |  | U2 | Sí |  |  |  |  |  |  |
| 82 | 1.2.4.1 | 3K — Mantenimiento 3k | 4d | 2027-02-22 | 2027-02-25 | 77 | start no earlier than 2027-02-22 | U2 | Sí | 3K | En ventana ±10% | No | 3113 | 3000 | 103.77 |
| 83 | 1.2.5 | **Evento 20 — U8 (LC)** | 2d | 2027-02-26 | 2027-02-27 |  |  | U8 | Sí |  |  |  |  |  |  |
| 84 | 1.2.5.1 | LC — Lavado caldera | 2d | 2027-02-26 | 2027-02-27 | 82 | start no earlier than 2027-02-26 | U8 | Sí | LC | En ventana ±10% | No | 1521 | 1500 | 101.4 |
| 85 | 1.2.6 | **Evento 21 — U3 (12K, TC, BEB, MB, 6K, 3K)** | 23d | 2027-02-28 | 2027-03-22 |  |  | U3 | No |  |  |  |  |  |  |
| 86 | 1.2.6.1 | 12K — Mantenimiento 12k (OVH) | 23d | 2027-02-28 | 2027-03-22 | 84 | start no earlier than 2027-02-28 | U3 | No | 12K | En ventana ±10% | No | 12425 | 12000 | 103.54 |
| 87 | 1.2.6.2 | TC — Mantto. turbocargadores | 23d | 2027-02-28 | 2027-03-22 | 84 | start no earlier than 2027-02-28 | U3 | No | TC | En ventana ±10% | No | 12425 | 12000 | 103.54 |
| 88 | 1.2.6.3 | BEB — Horas BEB | 23d | 2027-02-28 | 2027-03-22 | 84 | start no earlier than 2027-02-28 | U3 | No | BEB | En ventana ±10% | No | 12425 | 12000 | 103.54 |
| 89 | 1.2.6.4 | MB — Cojinetes de bancada MB | 23d | 2027-02-28 | 2027-03-22 | 84 | start no earlier than 2027-02-28 | U3 | No | MB | En ventana ±10% | No | 26267 | 24000 | 109.45 |
| 90 | 1.2.6.5 | 6K — Mantenimiento 6k | 23d | 2027-02-28 | 2027-03-22 | 84 | start no earlier than 2027-02-28 | U3 | No | 6K | Atraso heredado | Sí | 12425 | 6000 | 207.08 |
| 91 | 1.2.6.6 | 3K — Mantenimiento 3k | 23d | 2027-02-28 | 2027-03-22 | 84 | start no earlier than 2027-02-28 | U3 | No | 3K | Fuera de ventana | No | 8348 | 3000 | 278.27 |
| 92 | 1.2.7 | **Evento 22 — U14 (6K, 3K)** | 7d | 2027-03-23 | 2027-03-29 |  |  | U14 | No |  |  |  |  |  |  |
| 93 | 1.2.7.1 | 6K — Mantenimiento 6k | 7d | 2027-03-23 | 2027-03-29 | 86 | start no earlier than 2027-03-23 | U14 | No | 6K | Fuera de ventana | No | 7656 | 6000 | 127.6 |
| 94 | 1.2.7.2 | 3K — Mantenimiento 3k | 7d | 2027-03-23 | 2027-03-29 | 86 | start no earlier than 2027-03-23 | U14 | No | 3K | Fuera de ventana | No | 4536 | 3000 | 151.2 |
| 95 | 1.2.8 | **Evento 23 — U2 (LC)** | 2d | 2027-03-30 | 2027-03-31 |  |  | U2 | Sí |  |  |  |  |  |  |
| 96 | 1.2.8.1 | LC — Lavado caldera | 2d | 2027-03-30 | 2027-03-31 | 93 | start no earlier than 2027-03-30 | U2 | Sí | LC | En ventana ±10% | No | 1592 | 1500 | 106.13 |
| 97 | 1.2.9 | **Evento 24 — U16 (3K)** | 4d | 2027-04-01 | 2027-04-04 |  |  | U16 | No |  |  |  |  |  |  |
| 98 | 1.2.9.1 | 3K — Mantenimiento 3k | 4d | 2027-04-01 | 2027-04-04 | 96 | start no earlier than 2027-04-01 | U16 | No | 3K | En ventana ±10% | No | 3154 | 3000 | 105.13 |
| 99 | 1.2.10 | **Evento 25 — U6 (12K, TC, BEB, MB, 6K, 3K)** | 23d | 2027-04-05 | 2027-04-27 |  |  | U6 | No |  |  |  |  |  |  |
| 100 | 1.2.10.1 | 12K — Mantenimiento 12k (OVH) | 23d | 2027-04-05 | 2027-04-27 | 98 | start no earlier than 2027-04-05 | U6 | No | 12K | En ventana ±10% | No | 12108 | 12000 | 100.9 |
| 101 | 1.2.10.2 | TC — Mantto. turbocargadores | 23d | 2027-04-05 | 2027-04-27 | 98 | start no earlier than 2027-04-05 | U6 | No | TC | En ventana ±10% | No | 12108 | 12000 | 100.9 |
| 102 | 1.2.10.3 | BEB — Horas BEB | 23d | 2027-04-05 | 2027-04-27 | 98 | start no earlier than 2027-04-05 | U6 | No | BEB | En ventana ±10% | No | 12108 | 12000 | 100.9 |
| 103 | 1.2.10.4 | MB — Cojinetes de bancada MB | 23d | 2027-04-05 | 2027-04-27 | 98 | start no earlier than 2027-04-05 | U6 | No | MB | Adelantado | No | 21428 | 24000 | 89.28 |
| 104 | 1.2.10.5 | 6K — Mantenimiento 6k | 23d | 2027-04-05 | 2027-04-27 | 98 | start no earlier than 2027-04-05 | U6 | No | 6K | Fuera de ventana | No | 12108 | 6000 | 201.8 |
| 105 | 1.2.10.6 | 3K — Mantenimiento 3k | 23d | 2027-04-05 | 2027-04-27 | 98 | start no earlier than 2027-04-05 | U6 | No | 3K | Fuera de ventana | No | 8641 | 3000 | 288.03 |

Notes:
- 81: Unidad U2 · Caldera: Sí · 4 días de salida (22/02/2027 – 25/02/2027)
- 83: Unidad U8 · Caldera: Sí · 2 días de salida (26/02/2027 – 27/02/2027)
- 85: Unidad U3 · Caldera: No · 23 días de salida (28/02/2027 – 22/03/2027)
- 92: Unidad U14 · Caldera: No · 7 días de salida (23/03/2027 – 29/03/2027)
- 95: Unidad U2 · Caldera: Sí · 2 días de salida (30/03/2027 – 31/03/2027)
- 97: Unidad U16 · Caldera: No · 4 días de salida (01/04/2027 – 04/04/2027)
- 99: Unidad U6 · Caldera: No · 23 días de salida (05/04/2027 – 27/04/2027)

| ID | WBS | Task | Duration | Start | Finish | Predecessors | Constraint | Unidad | Caldera | Código | Estado | Atraso heredado | Horas al ejecutar | Intervalo (h) | % intervalo |
| --- | --- | --- | --- | --- | --- | --- | --- | --- | --- | --- | --- | --- | --- | --- | --- |
| 106 | 1.2.11 | **Evento 26 — U4 (3K)** | 4d | 2027-04-28 | 2027-05-01 |  |  | U4 | No |  |  |  |  |  |  |
| 107 | 1.2.11.1 | 3K — Mantenimiento 3k | 4d | 2027-04-28 | 2027-05-01 | 100 | start no earlier than 2027-04-28 | U4 | No | 3K | En ventana ±10% | No | 3240 | 3000 | 108 |
| 108 | 1.2.12 | **Evento 27 — U15 (LC)** | 2d | 2027-05-02 | 2027-05-03 |  |  | U15 | Sí |  |  |  |  |  |  |
| 109 | 1.2.12.1 | LC — Lavado caldera | 2d | 2027-05-02 | 2027-05-03 | 107 | start no earlier than 2027-05-02 | U15 | Sí | LC | En ventana ±10% | No | 1639 | 1500 | 109.27 |
| 110 | 1.2.13 | **Evento 28 — U11 (12K, TC, BEB, 6K, 3K)** | 23d | 2027-05-04 | 2027-05-26 |  |  | U11 | No |  |  |  |  |  |  |
| 111 | 1.2.13.1 | 12K — Mantenimiento 12k (OVH) | 23d | 2027-05-04 | 2027-05-26 | 109 | start no earlier than 2027-05-04 | U11 | No | 12K | Fuera de ventana | No | 17208 | 12000 | 143.4 |
| 112 | 1.2.13.2 | TC — Mantto. turbocargadores | 23d | 2027-05-04 | 2027-05-26 | 109 | start no earlier than 2027-05-04 | U11 | No | TC | Fuera de ventana | No | 17208 | 12000 | 143.4 |
| 113 | 1.2.13.3 | BEB — Horas BEB | 23d | 2027-05-04 | 2027-05-26 | 109 | start no earlier than 2027-05-04 | U11 | No | BEB | Adelantado | No | 9261 | 12000 | 77.18 |
| 114 | 1.2.13.4 | 6K — Mantenimiento 6k | 23d | 2027-05-04 | 2027-05-26 | 109 | start no earlier than 2027-05-04 | U11 | No | 6K | Fuera de ventana | No | 11086 | 6000 | 184.77 |
| 115 | 1.2.13.5 | 3K — Mantenimiento 3k | 23d | 2027-05-04 | 2027-05-26 | 109 | start no earlier than 2027-05-04 | U11 | No | 3K | Fuera de ventana | No | 6701 | 3000 | 223.37 |
| 116 | 1.2.14 | **Evento 29 — U12 (3K)** | 4d | 2027-05-27 | 2027-05-30 |  |  | U12 | No |  |  |  |  |  |  |
| 117 | 1.2.14.1 | 3K — Mantenimiento 3k | 4d | 2027-05-27 | 2027-05-30 | 111 | start no earlier than 2027-05-27 | U12 | No | 3K | En ventana ±10% | No | 2830 | 3000 | 94.33 |
| 118 | 1.2.15 | **Evento 30 — U5 (12K, TC, BEB, 6K, 3K)** | 23d | 2027-05-31 | 2027-06-22 |  |  | U5 | No |  |  |  |  |  |  |
| 119 | 1.2.15.1 | 12K — Mantenimiento 12k (OVH) | 23d | 2027-05-31 | 2027-06-22 | 117 | start no earlier than 2027-05-31 | U5 | No | 12K | Fuera de ventana | No | 17930 | 12000 | 149.42 |
| 120 | 1.2.15.2 | TC — Mantto. turbocargadores | 23d | 2027-05-31 | 2027-06-22 | 117 | start no earlier than 2027-05-31 | U5 | No | TC | Fuera de ventana | No | 17930 | 12000 | 149.42 |
| 121 | 1.2.15.3 | BEB — Horas BEB | 23d | 2027-05-31 | 2027-06-22 | 117 | start no earlier than 2027-05-31 | U5 | No | BEB | Adelantado | No | 9340 | 12000 | 77.83 |
| 122 | 1.2.15.4 | 6K — Mantenimiento 6k | 23d | 2027-05-31 | 2027-06-22 | 117 | start no earlier than 2027-05-31 | U5 | No | 6K | Fuera de ventana | No | 7214 | 6000 | 120.23 |
| 123 | 1.2.15.5 | 3K — Mantenimiento 3k | 23d | 2027-05-31 | 2027-06-22 | 117 | start no earlier than 2027-05-31 | U5 | No | 3K | Fuera de ventana | No | 7214 | 3000 | 240.47 |
| 124 | 1.2.16 | **Evento 31 — U1 (3K)** | 4d | 2027-06-23 | 2027-06-26 |  |  | U1 | No |  |  |  |  |  |  |
| 125 | 1.2.16.1 | 3K — Mantenimiento 3k | 4d | 2027-06-23 | 2027-06-26 | 119 | start no earlier than 2027-06-23 | U1 | No | 3K | En ventana ±10% | No | 2873 | 3000 | 95.77 |
| 126 | 1.2.17 | **Evento 32 — U13 (12K, TC, BEB, 6K, 3K)** | 23d | 2027-06-27 | 2027-07-19 |  |  | U13 | No |  |  |  |  |  |  |
| 127 | 1.2.17.1 | 12K — Mantenimiento 12k (OVH) | 23d | 2027-06-27 | 2027-07-19 | 125 | start no earlier than 2027-06-27 | U13 | No | 12K | En ventana ±10% | No | 11714 | 12000 | 97.62 |
| 128 | 1.2.17.2 | TC — Mantto. turbocargadores | 23d | 2027-06-27 | 2027-07-19 | 125 | start no earlier than 2027-06-27 | U13 | No | TC | En ventana ±10% | No | 11714 | 12000 | 97.62 |
| 129 | 1.2.17.3 | BEB — Horas BEB | 23d | 2027-06-27 | 2027-07-19 | 125 | start no earlier than 2027-06-27 | U13 | No | BEB | En ventana ±10% | No | 11714 | 12000 | 97.62 |
| 130 | 1.2.17.4 | 6K — Mantenimiento 6k | 23d | 2027-06-27 | 2027-07-19 | 125 | start no earlier than 2027-06-27 | U13 | No | 6K | Fuera de ventana | No | 11714 | 6000 | 195.23 |
| 131 | 1.2.17.5 | 3K — Mantenimiento 3k | 23d | 2027-06-27 | 2027-07-19 | 125 | start no earlier than 2027-06-27 | U13 | No | 3K | Fuera de ventana | No | 7214 | 3000 | 240.47 |

Notes:
- 106: Unidad U4 · Caldera: No · 4 días de salida (28/04/2027 – 01/05/2027)
- 108: Unidad U15 · Caldera: Sí · 2 días de salida (02/05/2027 – 03/05/2027)
- 110: Unidad U11 · Caldera: No · 23 días de salida (04/05/2027 – 26/05/2027)
- 116: Unidad U12 · Caldera: No · 4 días de salida (27/05/2027 – 30/05/2027)
- 118: Unidad U5 · Caldera: No · 23 días de salida (31/05/2027 – 22/06/2027)
- 124: Unidad U1 · Caldera: No · 4 días de salida (23/06/2027 – 26/06/2027)
- 126: Unidad U13 · Caldera: No · 23 días de salida (27/06/2027 – 19/07/2027)

| ID | WBS | Task | Duration | Start | Finish | Predecessors | Constraint | Unidad | Caldera | Código | Estado | Atraso heredado | Horas al ejecutar | Intervalo (h) | % intervalo |
| --- | --- | --- | --- | --- | --- | --- | --- | --- | --- | --- | --- | --- | --- | --- | --- |
| 132 | 1.2.18 | **Evento 33 — U3 (3K)** | 4d | 2027-07-20 | 2027-07-23 |  |  | U3 | No |  |  |  |  |  |  |
| 133 | 1.2.18.1 | 3K — Mantenimiento 3k | 4d | 2027-07-20 | 2027-07-23 | 127 | start no earlier than 2027-07-20 | U3 | No | 3K | Adelantado | No | 2570 | 3000 | 85.67 |
| 134 | 1.2.19 | **Evento 34 — U7 (LC, 12K, TC, 6K, 3K)** | 23d | 2027-07-24 | 2027-08-15 |  |  | U7 | Sí |  |  |  |  |  |  |
| 135 | 1.2.19.1 | LC — Lavado caldera | 23d | 2027-07-24 | 2027-08-15 | 133 | start no earlier than 2027-07-24 | U7 | Sí | LC | Fuera de ventana | No | 7318 | 1500 | 487.87 |
| 136 | 1.2.19.2 | 12K — Mantenimiento 12k (OVH) | 23d | 2027-07-24 | 2027-08-15 | 133 | start no earlier than 2027-07-24 | U7 | Sí | 12K | Fuera de ventana | No | 15184 | 12000 | 126.53 |
| 137 | 1.2.19.3 | TC — Mantto. turbocargadores | 23d | 2027-07-24 | 2027-08-15 | 133 | start no earlier than 2027-07-24 | U7 | Sí | TC | Fuera de ventana | No | 15184 | 12000 | 126.53 |
| 138 | 1.2.19.4 | 6K — Mantenimiento 6k | 23d | 2027-07-24 | 2027-08-15 | 133 | start no earlier than 2027-07-24 | U7 | Sí | 6K | Fuera de ventana | No | 8150 | 6000 | 135.83 |
| 139 | 1.2.19.5 | 3K — Mantenimiento 3k | 23d | 2027-07-24 | 2027-08-15 | 133 | start no earlier than 2027-07-24 | U7 | Sí | 3K | Fuera de ventana | No | 8150 | 3000 | 271.67 |
| 140 | 1.2.20 | **Evento 35 — U9 (LC, 6K, BEB, 3K)** | 12d | 2027-08-16 | 2027-08-27 |  |  | U9 | Sí |  |  |  |  |  |  |
| 141 | 1.2.20.1 | LC — Lavado caldera | 12d | 2027-08-16 | 2027-08-27 | 135 | start no earlier than 2027-08-16 | U9 | Sí | LC | Fuera de ventana | No | 7271 | 1500 | 484.73 |
| 142 | 1.2.20.2 | 6K — Mantenimiento 6k | 12d | 2027-08-16 | 2027-08-27 | 135 | start no earlier than 2027-08-16 | U9 | Sí | 6K | Fuera de ventana | No | 9171 | 6000 | 152.85 |
| 143 | 1.2.20.3 | BEB — Horas BEB | 12d | 2027-08-16 | 2027-08-27 | 135 | start no earlier than 2027-08-16 | U9 | Sí | BEB | En ventana ±10% | No | 12253 | 12000 | 102.11 |
| 144 | 1.2.20.4 | 3K — Mantenimiento 3k | 12d | 2027-08-16 | 2027-08-27 | 135 | start no earlier than 2027-08-16 | U9 | Sí | 3K | Fuera de ventana | No | 9171 | 3000 | 305.7 |
| 145 | 1.2.21 | **Evento 36 — U6 (3K)** | 4d | 2027-08-28 | 2027-08-31 |  |  | U6 | No |  |  |  |  |  |  |
| 146 | 1.2.21.1 | 3K — Mantenimiento 3k | 4d | 2027-08-28 | 2027-08-31 | 141 | start no earlier than 2027-08-28 | U6 | No | 3K | Adelantado | No | 2635 | 3000 | 87.83 |
| 147 | 1.2.22 | **Evento 37 — U10 (LC, 6K, 3K)** | 8d | 2027-09-01 | 2027-09-08 |  |  | U10 | Sí |  |  |  |  |  |  |
| 148 | 1.2.22.1 | LC — Lavado caldera | 8d | 2027-09-01 | 2027-09-08 | 146 | start no earlier than 2027-09-01 | U10 | Sí | LC | Fuera de ventana | No | 6510 | 1500 | 434 |
| 149 | 1.2.22.2 | 6K — Mantenimiento 6k | 8d | 2027-09-01 | 2027-09-08 | 146 | start no earlier than 2027-09-01 | U10 | Sí | 6K | Fuera de ventana | No | 8245 | 6000 | 137.42 |
| 150 | 1.2.22.3 | 3K — Mantenimiento 3k | 8d | 2027-09-01 | 2027-09-08 | 146 | start no earlier than 2027-09-01 | U10 | Sí | 3K | Fuera de ventana | No | 8245 | 3000 | 274.83 |
| 151 | 1.2.23 | **Evento 38 — U8 (LC, 6K, 3K)** | 8d | 2027-09-09 | 2027-09-16 |  |  | U8 | Sí |  |  |  |  |  |  |
| 152 | 1.2.23.1 | LC — Lavado caldera | 8d | 2027-09-09 | 2027-09-16 | 148 | start no earlier than 2027-09-09 | U8 | Sí | LC | Fuera de ventana | No | 4586 | 1500 | 305.73 |
| 153 | 1.2.23.2 | 6K — Mantenimiento 6k | 8d | 2027-09-09 | 2027-09-16 | 148 | start no earlier than 2027-09-09 | U8 | Sí | 6K | En ventana ±10% | No | 6106 | 6000 | 101.77 |
| 154 | 1.2.23.3 | 3K — Mantenimiento 3k | 8d | 2027-09-09 | 2027-09-16 | 148 | start no earlier than 2027-09-09 | U8 | Sí | 3K | Fuera de ventana | No | 6106 | 3000 | 203.53 |
| 155 | 1.2.24 | **Evento 39 — U2 (LC, 6K, BEB, 3K)** | 12d | 2027-09-17 | 2027-09-28 |  |  | U2 | Sí |  |  |  |  |  |  |
| 156 | 1.2.24.1 | LC — Lavado caldera | 12d | 2027-09-17 | 2027-09-28 | 152 | start no earlier than 2027-09-17 | U2 | Sí | LC | Fuera de ventana | No | 4015 | 1500 | 267.67 |
| 157 | 1.2.24.2 | 6K — Mantenimiento 6k | 12d | 2027-09-17 | 2027-09-28 | 152 | start no earlier than 2027-09-17 | U2 | Sí | 6K | Fuera de ventana | No | 7888 | 6000 | 131.47 |
| 158 | 1.2.24.3 | BEB — Horas BEB | 12d | 2027-09-17 | 2027-09-28 | 152 | start no earlier than 2027-09-17 | U2 | Sí | BEB | Fuera de ventana | No | 13483 | 12000 | 112.36 |
| 159 | 1.2.24.4 | 3K — Mantenimiento 3k | 12d | 2027-09-17 | 2027-09-28 | 152 | start no earlier than 2027-09-17 | U2 | Sí | 3K | Fuera de ventana | No | 4776 | 3000 | 159.2 |

Notes:
- 132: Unidad U3 · Caldera: No · 4 días de salida (20/07/2027 – 23/07/2027)
- 134: Unidad U7 · Caldera: Sí · 23 días de salida (24/07/2027 – 15/08/2027)
- 140: Unidad U9 · Caldera: Sí · 12 días de salida (16/08/2027 – 27/08/2027)
- 145: Unidad U6 · Caldera: No · 4 días de salida (28/08/2027 – 31/08/2027)
- 147: Unidad U10 · Caldera: Sí · 8 días de salida (01/09/2027 – 08/09/2027)
- 151: Unidad U8 · Caldera: Sí · 8 días de salida (09/09/2027 – 16/09/2027)
- 155: Unidad U2 · Caldera: Sí · 12 días de salida (17/09/2027 – 28/09/2027)

| ID | WBS | Task | Duration | Start | Finish | Predecessors | Constraint | Unidad | Caldera | Código | Estado | Atraso heredado | Horas al ejecutar | Intervalo (h) | % intervalo |
| --- | --- | --- | --- | --- | --- | --- | --- | --- | --- | --- | --- | --- | --- | --- | --- |
| 160 | 1.2.25 | **Evento 40 — U15 (LC, 12K, TC, 3K)** | 23d | 2027-09-29 | 2027-10-21 |  |  | U15 | Sí |  |  |  |  |  |  |
| 161 | 1.2.25.1 | LC — Lavado caldera | 23d | 2027-09-29 | 2027-10-21 | 156 | start no earlier than 2027-09-29 | U15 | Sí | LC | Fuera de ventana | No | 3516 | 1500 | 234.4 |
| 162 | 1.2.25.2 | 12K — Mantenimiento 12k (OVH) | 23d | 2027-09-29 | 2027-10-21 | 156 | start no earlier than 2027-09-29 | U15 | Sí | 12K | En ventana ±10% | No | 11276 | 12000 | 93.97 |
| 163 | 1.2.25.3 | TC — Mantto. turbocargadores | 23d | 2027-09-29 | 2027-10-21 | 156 | start no earlier than 2027-09-29 | U15 | Sí | TC | En ventana ±10% | No | 11276 | 12000 | 93.97 |
| 164 | 1.2.25.4 | 3K — Mantenimiento 3k | 23d | 2027-09-29 | 2027-10-21 | 156 | start no earlier than 2027-09-29 | U15 | Sí | 3K | Fuera de ventana | No | 5156 | 3000 | 171.87 |
| 165 | 1.2.26 | **Evento 41 — U7 (LC)** | 2d | 2027-10-22 | 2027-10-23 |  |  | U7 | Sí |  |  |  |  |  |  |
| 166 | 1.2.26.1 | LC — Lavado caldera | 2d | 2027-10-22 | 2027-10-23 | 161 | start no earlier than 2027-10-22 | U7 | Sí | LC | En ventana ±10% | No | 1592 | 1500 | 106.13 |
| 167 | 1.2.27 | **Evento 42 — U11 (3K)** | 4d | 2027-10-24 | 2027-10-27 |  |  | U11 | No |  |  |  |  |  |  |
| 168 | 1.2.27.1 | 3K — Mantenimiento 3k | 4d | 2027-10-24 | 2027-10-27 | 166 | start no earlier than 2027-10-24 | U11 | No | 3K | En ventana ±10% | No | 3240 | 3000 | 108 |
| 169 | 1.2.28 | **Evento 43 — U9 (LC)** | 2d | 2027-10-28 | 2027-10-29 |  |  | U9 | Sí |  |  |  |  |  |  |
| 170 | 1.2.28.1 | LC — Lavado caldera | 2d | 2027-10-28 | 2027-10-29 | 168 | start no earlier than 2027-10-28 | U9 | Sí | LC | En ventana ±10% | No | 1449 | 1500 | 96.6 |
| 171 | 1.2.29 | **Evento 44 — U14 (12K, TC, BEB, 3K)** | 23d | 2027-10-30 | 2027-11-21 |  |  | U14 | No |  |  |  |  |  |  |
| 172 | 1.2.29.1 | 12K — Mantenimiento 12k (OVH) | 23d | 2027-10-30 | 2027-11-21 | 170 | start no earlier than 2027-10-30 | U14 | No | 12K | En ventana ±10% | No | 12278 | 12000 | 102.32 |
| 173 | 1.2.29.2 | TC — Mantto. turbocargadores | 23d | 2027-10-30 | 2027-11-21 | 170 | start no earlier than 2027-10-30 | U14 | No | TC | En ventana ±10% | No | 12278 | 12000 | 102.32 |
| 174 | 1.2.29.3 | BEB — Horas BEB | 23d | 2027-10-30 | 2027-11-21 | 170 | start no earlier than 2027-10-30 | U14 | No | BEB | En ventana ±10% | No | 12278 | 12000 | 102.32 |
| 175 | 1.2.29.4 | 3K — Mantenimiento 3k | 23d | 2027-10-30 | 2027-11-21 | 170 | start no earlier than 2027-10-30 | U14 | No | 3K | Fuera de ventana | No | 4622 | 3000 | 154.07 |
| 176 | 1.2.30 | **Evento 45 — U5 (3K)** | 4d | 2027-11-22 | 2027-11-25 |  |  | U5 | No |  |  |  |  |  |  |
| 177 | 1.2.30.1 | 3K — Mantenimiento 3k | 4d | 2027-11-22 | 2027-11-25 | 172 | start no earlier than 2027-11-22 | U5 | No | 3K | En ventana ±10% | No | 3283 | 3000 | 109.43 |
| 178 | 1.2.31 | **Evento 46 — U10 (LC)** | 2d | 2027-11-26 | 2027-11-27 |  |  | U10 | Sí |  |  |  |  |  |  |
| 179 | 1.2.31.1 | LC — Lavado caldera | 2d | 2027-11-26 | 2027-11-27 | 177 | start no earlier than 2027-11-26 | U10 | Sí | LC | Fuera de ventana | No | 1853 | 1500 | 123.53 |
| 180 | 1.2.32 | **Evento 47 — U8 (LC)** | 2d | 2027-11-28 | 2027-11-29 |  |  | U8 | Sí |  |  |  |  |  |  |
| 181 | 1.2.32.1 | LC — Lavado caldera | 2d | 2027-11-28 | 2027-11-29 | 179 | start no earlier than 2027-11-28 | U8 | Sí | LC | Fuera de ventana | No | 1711 | 1500 | 114.07 |
| 182 | 1.2.33 | **Evento 48 — U2 (LC)** | 2d | 2027-11-30 | 2027-12-01 |  |  | U2 | Sí |  |  |  |  |  |  |
| 183 | 1.2.33.1 | LC — Lavado caldera | 2d | 2027-11-30 | 2027-12-01 | 181 | start no earlier than 2027-11-30 | U2 | Sí | LC | En ventana ±10% | No | 1473 | 1500 | 98.2 |

Notes:
- 160: Unidad U15 · Caldera: Sí · 23 días de salida (29/09/2027 – 21/10/2027)
- 165: Unidad U7 · Caldera: Sí · 2 días de salida (22/10/2027 – 23/10/2027)
- 167: Unidad U11 · Caldera: No · 4 días de salida (24/10/2027 – 27/10/2027)
- 169: Unidad U9 · Caldera: Sí · 2 días de salida (28/10/2027 – 29/10/2027)
- 171: Unidad U14 · Caldera: No · 23 días de salida (30/10/2027 – 21/11/2027)
- 176: Unidad U5 · Caldera: No · 4 días de salida (22/11/2027 – 25/11/2027)
- 178: Unidad U10 · Caldera: Sí · 2 días de salida (26/11/2027 – 27/11/2027)
- 180: Unidad U8 · Caldera: Sí · 2 días de salida (28/11/2027 – 29/11/2027)
- 182: Unidad U2 · Caldera: Sí · 2 días de salida (30/11/2027 – 01/12/2027)

| ID | WBS | Task | Duration | Start | Finish | Predecessors | Constraint | Unidad | Caldera | Código | Estado | Atraso heredado | Horas al ejecutar | Intervalo (h) | % intervalo |
| --- | --- | --- | --- | --- | --- | --- | --- | --- | --- | --- | --- | --- | --- | --- | --- |
| 184 | 1.2.34 | **Evento 49 — U16 (6K, BEB, 3K)** | 11d | 2027-12-02 | 2027-12-12 |  |  | U16 | No |  |  |  |  |  |  |
| 185 | 1.2.34.1 | 6K — Mantenimiento 6k | 11d | 2027-12-02 | 2027-12-12 | 183 | start no earlier than 2027-12-02 | U16 | No | 6K | Fuera de ventana | No | 8359 | 6000 | 139.32 |
| 186 | 1.2.34.2 | BEB — Horas BEB | 11d | 2027-12-02 | 2027-12-12 | 183 | start no earlier than 2027-12-02 | U16 | No | BEB | En ventana ±10% | No | 13056 | 12000 | 108.8 |
| 187 | 1.2.34.3 | 3K — Mantenimiento 3k | 11d | 2027-12-02 | 2027-12-12 | 183 | start no earlier than 2027-12-02 | U16 | No | 3K | Fuera de ventana | No | 5206 | 3000 | 173.53 |
| 188 | 1.2.35 | **Evento 50 — U13 (3K)** | 4d | 2027-12-13 | 2027-12-16 |  |  | U13 | No |  |  |  |  |  |  |
| 189 | 1.2.35.1 | 3K — Mantenimiento 3k | 4d | 2027-12-13 | 2027-12-16 | 185 | start no earlier than 2027-12-13 | U13 | No | 3K | En ventana ±10% | No | 3154 | 3000 | 105.13 |
| 190 | 1.2.36 | **Evento 51 — U4 (6K, 3K)** | 7d | 2027-12-17 | 2027-12-23 |  |  | U4 | No |  |  |  |  |  |  |
| 191 | 1.2.36.1 | 6K — Mantenimiento 6k | 7d | 2027-12-17 | 2027-12-23 | 189 | start no earlier than 2027-12-17 | U4 | No | 6K | Fuera de ventana | No | 8186 | 6000 | 136.43 |
| 192 | 1.2.36.2 | 3K — Mantenimiento 3k | 7d | 2027-12-17 | 2027-12-23 | 189 | start no earlier than 2027-12-17 | U4 | No | 3K | Fuera de ventana | No | 4946 | 3000 | 164.87 |
| 193 | 1.2.37 | **Evento 52 — U15 (LC)** | 2d | 2027-12-24 | 2027-12-25 |  |  | U15 | Sí |  |  |  |  |  |  |
| 194 | 1.2.37.1 | LC — Lavado caldera | 2d | 2027-12-24 | 2027-12-25 | 191 | start no earlier than 2027-12-24 | U15 | Sí | LC | En ventana ±10% | No | 1497 | 1500 | 99.8 |
| 195 | 1.2.38 | **Evento 53 — U12 (6K, 3K)** | 7d | 2027-12-26 | 2028-01-01 |  |  | U12 | No |  |  |  |  |  |  |
| 196 | 1.2.38.1 | 6K — Mantenimiento 6k | 7d | 2027-12-26 | 2028-01-01 | 194 | start no earlier than 2027-12-26 | U12 | No | 6K | Fuera de ventana | No | 7344 | 6000 | 122.4 |
| 197 | 1.2.38.2 | 3K — Mantenimiento 3k | 7d | 2027-12-26 | 2028-01-01 | 194 | start no earlier than 2027-12-26 | U12 | No | 3K | Fuera de ventana | No | 4514 | 3000 | 150.47 |
| 198 | 1.3 | **Año 2028** | 366d | 2028-01-02 | 2029-01-01 |  |  |  |  |  |  |  |  |  |  |
| 199 | 1.3.1 | **Evento 54 — U1 (6K, 3K)** | 7d | 2028-01-02 | 2028-01-08 |  |  | U1 | No |  |  |  |  |  |  |
| 200 | 1.3.1.1 | 6K — Mantenimiento 6k | 7d | 2028-01-02 | 2028-01-08 | 196 | start no earlier than 2028-01-02 | U1 | No | 6K | Fuera de ventana | No | 6955 | 6000 | 115.92 |
| 201 | 1.3.1.2 | 3K — Mantenimiento 3k | 7d | 2028-01-02 | 2028-01-08 | 196 | start no earlier than 2028-01-02 | U1 | No | 3K | Fuera de ventana | No | 4082 | 3000 | 136.07 |
| 202 | 1.3.2 | **Evento 55 — U3 (6K, 3K)** | 7d | 2028-01-09 | 2028-01-15 |  |  | U3 | No |  |  |  |  |  |  |
| 203 | 1.3.2.1 | 6K — Mantenimiento 6k | 7d | 2028-01-09 | 2028-01-15 | 200 | start no earlier than 2028-01-09 | U3 | No | 6K | En ventana ±10% | No | 6221 | 6000 | 103.68 |
| 204 | 1.3.2.2 | 3K — Mantenimiento 3k | 7d | 2028-01-09 | 2028-01-15 | 200 | start no earlier than 2028-01-09 | U3 | No | 3K | Fuera de ventana | No | 3650 | 3000 | 121.67 |
| 205 | 1.3.3 | **Evento 56 — U16 (12K, TC)** | 23d | 2028-01-16 | 2028-02-07 |  |  | U16 | No |  |  |  |  |  |  |
| 206 | 1.3.3.1 | 12K — Mantenimiento 12k (OVH) | 23d | 2028-01-16 | 2028-02-07 | 203 | start no earlier than 2028-01-16 | U16 | No | 12K | Adelantado | No | 9094 | 12000 | 75.78 |
| 207 | 1.3.3.2 | TC — Mantto. turbocargadores | 23d | 2028-01-16 | 2028-02-07 | 203 | start no earlier than 2028-01-16 | U16 | No | TC | Adelantado | No | 9094 | 12000 | 75.78 |

Notes:
- 184: Unidad U16 · Caldera: No · 11 días de salida (02/12/2027 – 12/12/2027)
- 188: Unidad U13 · Caldera: No · 4 días de salida (13/12/2027 – 16/12/2027)
- 190: Unidad U4 · Caldera: No · 7 días de salida (17/12/2027 – 23/12/2027)
- 193: Unidad U15 · Caldera: Sí · 2 días de salida (24/12/2027 – 25/12/2027)
- 195: Unidad U12 · Caldera: No · 7 días de salida (26/12/2027 – 01/01/2028)
- 199: Unidad U1 · Caldera: No · 7 días de salida (02/01/2028 – 08/01/2028)
- 202: Unidad U3 · Caldera: No · 7 días de salida (09/01/2028 – 15/01/2028)
- 205: Unidad U16 · Caldera: No · 23 días de salida (16/01/2028 – 07/02/2028)

| ID | WBS | Task | Duration | Start | Finish | Predecessors | Constraint | Unidad | Caldera | Código | Estado | Atraso heredado | Horas al ejecutar | Intervalo (h) | % intervalo |
| --- | --- | --- | --- | --- | --- | --- | --- | --- | --- | --- | --- | --- | --- | --- | --- |
| 208 | 1.3.4 | **Evento 57 — U7 (LC, 3K, BEB)** | 10d | 2028-02-08 | 2028-02-17 |  |  | U7 | Sí |  |  |  |  |  |  |
| 209 | 1.3.4.1 | LC — Lavado caldera | 10d | 2028-02-08 | 2028-02-17 | 206 | start no earlier than 2028-02-08 | U7 | Sí | LC | Fuera de ventana | No | 2542 | 1500 | 169.47 |
| 210 | 1.3.4.2 | 3K — Mantenimiento 3k | 10d | 2028-02-08 | 2028-02-17 | 206 | start no earlier than 2028-02-08 | U7 | Sí | 3K | Fuera de ventana | No | 4134 | 3000 | 137.8 |
| 211 | 1.3.4.3 | BEB — Horas BEB | 10d | 2028-02-08 | 2028-02-17 | 206 | start no earlier than 2028-02-08 | U7 | Sí | BEB | En ventana ±10% | No | 12284 | 12000 | 102.37 |
| 212 | 1.3.5 | **Evento 58 — U9 (LC, 12K, TC, 3K)** | 23d | 2028-02-18 | 2028-03-11 |  |  | U9 | Sí |  |  |  |  |  |  |
| 213 | 1.3.5.1 | LC — Lavado caldera | 23d | 2028-02-18 | 2028-03-11 | 209 | start no earlier than 2028-02-18 | U9 | Sí | LC | Fuera de ventana | No | 2637 | 1500 | 175.8 |
| 214 | 1.3.5.2 | 12K — Mantenimiento 12k (OVH) | 23d | 2028-02-18 | 2028-03-11 | 209 | start no earlier than 2028-02-18 | U9 | Sí | 12K | Fuera de ventana | No | 13258 | 12000 | 110.48 |
| 215 | 1.3.5.3 | TC — Mantto. turbocargadores | 23d | 2028-02-18 | 2028-03-11 | 209 | start no earlier than 2028-02-18 | U9 | Sí | TC | Fuera de ventana | No | 13258 | 12000 | 110.48 |
| 216 | 1.3.5.4 | 3K — Mantenimiento 3k | 23d | 2028-02-18 | 2028-03-11 | 209 | start no earlier than 2028-02-18 | U9 | Sí | 3K | Fuera de ventana | No | 4087 | 3000 | 136.23 |
| 217 | 1.3.6 | **Evento 59 — U10 (LC, 12K, TC, BEB, 3K)** | 23d | 2028-03-12 | 2028-04-03 |  |  | U10 | Sí |  |  |  |  |  |  |
| 218 | 1.3.6.1 | LC — Lavado caldera | 23d | 2028-03-12 | 2028-04-03 | 213 | start no earlier than 2028-03-12 | U10 | Sí | LC | Fuera de ventana | No | 2495 | 1500 | 166.33 |
| 219 | 1.3.6.2 | 12K — Mantenimiento 12k (OVH) | 23d | 2028-03-12 | 2028-04-03 | 213 | start no earlier than 2028-03-12 | U10 | Sí | 12K | En ventana ±10% | No | 12593 | 12000 | 104.94 |
| 220 | 1.3.6.3 | TC — Mantto. turbocargadores | 23d | 2028-03-12 | 2028-04-03 | 213 | start no earlier than 2028-03-12 | U10 | Sí | TC | En ventana ±10% | No | 12593 | 12000 | 104.94 |
| 221 | 1.3.6.4 | BEB — Horas BEB | 23d | 2028-03-12 | 2028-04-03 | 213 | start no earlier than 2028-03-12 | U10 | Sí | BEB | En ventana ±10% | No | 12593 | 12000 | 104.94 |
| 222 | 1.3.6.5 | 3K — Mantenimiento 3k | 23d | 2028-03-12 | 2028-04-03 | 213 | start no earlier than 2028-03-12 | U10 | Sí | 3K | Fuera de ventana | No | 4348 | 3000 | 144.93 |
| 223 | 1.3.7 | **Evento 60 — U6 (6K, 3K)** | 7d | 2028-04-04 | 2028-04-10 |  |  | U6 | No |  |  |  |  |  |  |
| 224 | 1.3.7.1 | 6K — Mantenimiento 6k | 7d | 2028-04-04 | 2028-04-10 | 218 | start no earlier than 2028-04-04 | U6 | No | 6K | Fuera de ventana | No | 7301 | 6000 | 121.68 |
| 225 | 1.3.7.2 | 3K — Mantenimiento 3k | 7d | 2028-04-04 | 2028-04-10 | 218 | start no earlier than 2028-04-04 | U6 | No | 3K | Fuera de ventana | No | 4666 | 3000 | 155.53 |
| 226 | 1.3.8 | **Evento 61 — U14 (3K)** | 4d | 2028-04-11 | 2028-04-14 |  |  | U14 | No |  |  |  |  |  |  |
| 227 | 1.3.8.1 | 3K — Mantenimiento 3k | 4d | 2028-04-11 | 2028-04-14 | 224 | start no earlier than 2028-04-11 | U14 | No | 3K | En ventana ±10% | No | 3046 | 3000 | 101.53 |
| 228 | 1.3.9 | **Evento 62 — U2 (LC, 12K, TC, 3K)** | 23d | 2028-04-15 | 2028-05-07 |  |  | U2 | Sí |  |  |  |  |  |  |
| 229 | 1.3.9.1 | LC — Lavado caldera | 23d | 2028-04-15 | 2028-05-07 | 227 | start no earlier than 2028-04-15 | U2 | Sí | LC | Fuera de ventana | No | 3208 | 1500 | 213.87 |
| 230 | 1.3.9.2 | 12K — Mantenimiento 12k (OVH) | 23d | 2028-04-15 | 2028-05-07 | 227 | start no earlier than 2028-04-15 | U2 | Sí | 12K | En ventana ±10% | No | 12569 | 12000 | 104.74 |
| 231 | 1.3.9.3 | TC — Mantto. turbocargadores | 23d | 2028-04-15 | 2028-05-07 | 227 | start no earlier than 2028-04-15 | U2 | Sí | TC | En ventana ±10% | No | 12569 | 12000 | 104.74 |
| 232 | 1.3.9.4 | 3K — Mantenimiento 3k | 23d | 2028-04-15 | 2028-05-07 | 227 | start no earlier than 2028-04-15 | U2 | Sí | 3K | Fuera de ventana | No | 4681 | 3000 | 156.03 |

Notes:
- 208: Unidad U7 · Caldera: Sí · 10 días de salida (08/02/2028 – 17/02/2028)
- 212: Unidad U9 · Caldera: Sí · 23 días de salida (18/02/2028 – 11/03/2028)
- 217: Unidad U10 · Caldera: Sí · 23 días de salida (12/03/2028 – 03/04/2028)
- 223: Unidad U6 · Caldera: No · 7 días de salida (04/04/2028 – 10/04/2028)
- 226: Unidad U14 · Caldera: No · 4 días de salida (11/04/2028 – 14/04/2028)
- 228: Unidad U2 · Caldera: Sí · 23 días de salida (15/04/2028 – 07/05/2028)

| ID | WBS | Task | Duration | Start | Finish | Predecessors | Constraint | Unidad | Caldera | Código | Estado | Atraso heredado | Horas al ejecutar | Intervalo (h) | % intervalo |
| --- | --- | --- | --- | --- | --- | --- | --- | --- | --- | --- | --- | --- | --- | --- | --- |
| 233 | 1.3.10 | **Evento 63 — U9 (LC)** | 2d | 2028-05-08 | 2028-05-09 |  |  | U9 | Sí |  |  |  |  |  |  |
| 234 | 1.3.10.1 | LC — Lavado caldera | 2d | 2028-05-08 | 2028-05-09 | 229 | start no earlier than 2028-05-08 | U9 | Sí | LC | En ventana ±10% | No | 1354 | 1500 | 90.27 |
| 235 | 1.3.11 | **Evento 64 — U15 (LC, 3K)** | 5d | 2028-05-10 | 2028-05-14 |  |  | U15 | Sí |  |  |  |  |  |  |
| 236 | 1.3.11.1 | LC — Lavado caldera | 5d | 2028-05-10 | 2028-05-14 | 234 | start no earlier than 2028-05-10 | U15 | Sí | LC | Fuera de ventana | No | 3231 | 1500 | 215.4 |
| 237 | 1.3.11.2 | 3K — Mantenimiento 3k | 5d | 2028-05-10 | 2028-05-14 | 234 | start no earlier than 2028-05-10 | U15 | Sí | 3K | Fuera de ventana | No | 4728 | 3000 | 157.6 |
| 238 | 1.3.12 | **Evento 65 — U8 (LC, 12K, TC, BEB, 3K)** | 23d | 2028-05-15 | 2028-06-06 |  |  | U8 | Sí |  |  |  |  |  |  |
| 239 | 1.3.12.1 | LC — Lavado caldera | 23d | 2028-05-15 | 2028-06-06 | 236 | start no earlier than 2028-05-15 | U8 | Sí | LC | Fuera de ventana | No | 3968 | 1500 | 264.53 |
| 240 | 1.3.12.2 | 12K — Mantenimiento 12k (OVH) | 23d | 2028-05-15 | 2028-06-06 | 236 | start no earlier than 2028-05-15 | U8 | Sí | 12K | En ventana ±10% | No | 11785 | 12000 | 98.21 |
| 241 | 1.3.12.3 | TC — Mantto. turbocargadores | 23d | 2028-05-15 | 2028-06-06 | 236 | start no earlier than 2028-05-15 | U8 | Sí | TC | En ventana ±10% | No | 11785 | 12000 | 98.21 |
| 242 | 1.3.12.4 | BEB — Horas BEB | 23d | 2028-05-15 | 2028-06-06 | 236 | start no earlier than 2028-05-15 | U8 | Sí | BEB | En ventana ±10% | No | 11785 | 12000 | 98.21 |
| 243 | 1.3.12.5 | 3K — Mantenimiento 3k | 23d | 2028-05-15 | 2028-06-06 | 236 | start no earlier than 2028-05-15 | U8 | Sí | 3K | Fuera de ventana | No | 5679 | 3000 | 189.3 |
| 244 | 1.3.13 | **Evento 66 — U1 (3K)** | 4d | 2028-06-07 | 2028-06-10 |  |  | U1 | No |  |  |  |  |  |  |
| 245 | 1.3.13.1 | 3K — Mantenimiento 3k | 4d | 2028-06-07 | 2028-06-10 | 239 | start no earlier than 2028-06-07 | U1 | No | 3K | En ventana ±10% | No | 3240 | 3000 | 108 |
| 246 | 1.3.14 | **Evento 67 — U10 (LC)** | 2d | 2028-06-11 | 2028-06-12 |  |  | U10 | Sí |  |  |  |  |  |  |
| 247 | 1.3.14.1 | LC — Lavado caldera | 2d | 2028-06-11 | 2028-06-12 | 245 | start no earlier than 2028-06-11 | U10 | Sí | LC | En ventana ±10% | No | 1616 | 1500 | 107.73 |
| 248 | 1.3.15 | **Evento 68 — U3 (3K)** | 4d | 2028-06-13 | 2028-06-16 |  |  | U3 | No |  |  |  |  |  |  |
| 249 | 1.3.15.1 | 3K — Mantenimiento 3k | 4d | 2028-06-13 | 2028-06-16 | 247 | start no earlier than 2028-06-13 | U3 | No | 3K | En ventana ±10% | No | 3218 | 3000 | 107.27 |
| 250 | 1.3.16 | **Evento 69 — U11 (6K, 3K)** | 7d | 2028-06-17 | 2028-06-23 |  |  | U11 | No |  |  |  |  |  |  |
| 251 | 1.3.16.1 | 6K — Mantenimiento 6k | 7d | 2028-06-17 | 2028-06-23 | 249 | start no earlier than 2028-06-17 | U11 | No | 6K | Fuera de ventana | No | 8273 | 6000 | 137.88 |
| 252 | 1.3.16.2 | 3K — Mantenimiento 3k | 7d | 2028-06-17 | 2028-06-23 | 249 | start no earlier than 2028-06-17 | U11 | No | 3K | Fuera de ventana | No | 5033 | 3000 | 167.77 |
| 253 | 1.3.17 | **Evento 70 — U5 (6K, 3K)** | 7d | 2028-06-24 | 2028-06-30 |  |  | U5 | No |  |  |  |  |  |  |
| 254 | 1.3.17.1 | 6K — Mantenimiento 6k | 7d | 2028-06-24 | 2028-06-30 | 251 | start no earlier than 2028-06-24 | U5 | No | 6K | Fuera de ventana | No | 7841 | 6000 | 130.68 |
| 255 | 1.3.17.2 | 3K — Mantenimiento 3k | 7d | 2028-06-24 | 2028-06-30 | 251 | start no earlier than 2028-06-24 | U5 | No | 3K | Fuera de ventana | No | 4558 | 3000 | 151.93 |
| 256 | 1.3.18 | **Evento 71 — U7 (LC, 6K)** | 8d | 2028-07-01 | 2028-07-08 |  |  | U7 | Sí |  |  |  |  |  |  |
| 257 | 1.3.18.1 | LC — Lavado caldera | 8d | 2028-07-01 | 2028-07-08 | 254 | start no earlier than 2028-07-01 | U7 | Sí | LC | Fuera de ventana | No | 3184 | 1500 | 212.27 |
| 258 | 1.3.18.2 | 6K — Mantenimiento 6k | 8d | 2028-07-01 | 2028-07-08 | 254 | start no earlier than 2028-07-01 | U7 | Sí | 6K | Fuera de ventana | No | 7318 | 6000 | 121.97 |

Notes:
- 233: Unidad U9 · Caldera: Sí · 2 días de salida (08/05/2028 – 09/05/2028)
- 235: Unidad U15 · Caldera: Sí · 5 días de salida (10/05/2028 – 14/05/2028)
- 238: Unidad U8 · Caldera: Sí · 23 días de salida (15/05/2028 – 06/06/2028)
- 244: Unidad U1 · Caldera: No · 4 días de salida (07/06/2028 – 10/06/2028)
- 246: Unidad U10 · Caldera: Sí · 2 días de salida (11/06/2028 – 12/06/2028)
- 248: Unidad U3 · Caldera: No · 4 días de salida (13/06/2028 – 16/06/2028)
- 250: Unidad U11 · Caldera: No · 7 días de salida (17/06/2028 – 23/06/2028)
- 253: Unidad U5 · Caldera: No · 7 días de salida (24/06/2028 – 30/06/2028)
- 256: Unidad U7 · Caldera: Sí · 8 días de salida (01/07/2028 – 08/07/2028)

| ID | WBS | Task | Duration | Start | Finish | Predecessors | Constraint | Unidad | Caldera | Código | Estado | Atraso heredado | Horas al ejecutar | Intervalo (h) | % intervalo |
| --- | --- | --- | --- | --- | --- | --- | --- | --- | --- | --- | --- | --- | --- | --- | --- |
| 259 | 1.3.19 | **Evento 72 — U16 (3K)** | 4d | 2028-07-09 | 2028-07-12 |  |  | U16 | No |  |  |  |  |  |  |
| 260 | 1.3.19.1 | 3K — Mantenimiento 3k | 4d | 2028-07-09 | 2028-07-12 | 257 | start no earlier than 2028-07-09 | U16 | No | 3K | En ventana ±10% | No | 3283 | 3000 | 109.43 |
| 261 | 1.3.20 | **Evento 73 — U2 (LC)** | 2d | 2028-07-13 | 2028-07-14 |  |  | U2 | Sí |  |  |  |  |  |  |
| 262 | 1.3.20.1 | LC — Lavado caldera | 2d | 2028-07-13 | 2028-07-14 | 260 | start no earlier than 2028-07-13 | U2 | Sí | LC | En ventana ±10% | No | 1568 | 1500 | 104.53 |
| 263 | 1.3.21 | **Evento 74 — U13 (6K, 3K)** | 7d | 2028-07-15 | 2028-07-21 |  |  | U13 | No |  |  |  |  |  |  |
| 264 | 1.3.21.1 | 6K — Mantenimiento 6k | 7d | 2028-07-15 | 2028-07-21 | 262 | start no earlier than 2028-07-15 | U13 | No | 6K | Fuera de ventana | No | 7711 | 6000 | 128.52 |
| 265 | 1.3.21.2 | 3K — Mantenimiento 3k | 7d | 2028-07-15 | 2028-07-21 | 262 | start no earlier than 2028-07-15 | U13 | No | 3K | Fuera de ventana | No | 4558 | 3000 | 151.93 |
| 266 | 1.3.22 | **Evento 75 — U4 (12K, TC, BEB, 3K)** | 23d | 2028-07-22 | 2028-08-13 |  |  | U4 | No |  |  |  |  |  |  |
| 267 | 1.3.22.1 | 12K — Mantenimiento 12k (OVH) | 23d | 2028-07-22 | 2028-08-13 | 264 | start no earlier than 2028-07-22 | U4 | No | 12K | En ventana ±10% | No | 12744 | 12000 | 106.2 |
| 268 | 1.3.22.2 | TC — Mantto. turbocargadores | 23d | 2028-07-22 | 2028-08-13 | 264 | start no earlier than 2028-07-22 | U4 | No | TC | En ventana ±10% | No | 12744 | 12000 | 106.2 |
| 269 | 1.3.22.3 | BEB — Horas BEB | 23d | 2028-07-22 | 2028-08-13 | 264 | start no earlier than 2028-07-22 | U4 | No | BEB | En ventana ±10% | No | 12744 | 12000 | 106.2 |
| 270 | 1.3.22.4 | 3K — Mantenimiento 3k | 23d | 2028-07-22 | 2028-08-13 | 264 | start no earlier than 2028-07-22 | U4 | No | 3K | Fuera de ventana | No | 4558 | 3000 | 151.93 |
| 271 | 1.3.23 | **Evento 76 — U8 (LC)** | 2d | 2028-08-14 | 2028-08-15 |  |  | U8 | Sí |  |  |  |  |  |  |
| 272 | 1.3.23.1 | LC — Lavado caldera | 2d | 2028-08-14 | 2028-08-15 | 267 | start no earlier than 2028-08-14 | U8 | Sí | LC | En ventana ±10% | No | 1616 | 1500 | 107.73 |
| 273 | 1.3.24 | **Evento 77 — U12 (12K, TC, BEB, MB, 3K)** | 23d | 2028-08-16 | 2028-09-07 |  |  | U12 | No |  |  |  |  |  |  |
| 274 | 1.3.24.1 | 12K — Mantenimiento 12k (OVH) | 23d | 2028-08-16 | 2028-09-07 | 272 | start no earlier than 2028-08-16 | U12 | No | 12K | En ventana ±10% | No | 12247 | 12000 | 102.06 |
| 275 | 1.3.24.2 | TC — Mantto. turbocargadores | 23d | 2028-08-16 | 2028-09-07 | 272 | start no earlier than 2028-08-16 | U12 | No | TC | En ventana ±10% | No | 12247 | 12000 | 102.06 |
| 276 | 1.3.24.3 | BEB — Horas BEB | 23d | 2028-08-16 | 2028-09-07 | 272 | start no earlier than 2028-08-16 | U12 | No | BEB | En ventana ±10% | No | 12247 | 12000 | 102.06 |
| 277 | 1.3.24.4 | MB — Cojinetes de bancada MB | 23d | 2028-08-16 | 2028-09-07 | 272 | start no earlier than 2028-08-16 | U12 | No | MB | En ventana ±10% | No | 26313 | 24000 | 109.64 |
| 278 | 1.3.24.5 | 3K — Mantenimiento 3k | 23d | 2028-08-16 | 2028-09-07 | 272 | start no earlier than 2028-08-16 | U12 | No | 3K | Fuera de ventana | No | 4903 | 3000 | 163.43 |
| 279 | 1.3.25 | **Evento 78 — U6 (3K)** | 4d | 2028-09-08 | 2028-09-11 |  |  | U6 | No |  |  |  |  |  |  |
| 280 | 1.3.25.1 | 3K — Mantenimiento 3k | 4d | 2028-09-08 | 2028-09-11 | 274 | start no earlier than 2028-09-08 | U6 | No | 3K | En ventana ±10% | No | 3240 | 3000 | 108 |
| 281 | 1.3.26 | **Evento 79 — U7 (LC)** | 2d | 2028-09-12 | 2028-09-13 |  |  | U7 | Sí |  |  |  |  |  |  |
| 282 | 1.3.26.1 | LC — Lavado caldera | 2d | 2028-09-12 | 2028-09-13 | 280 | start no earlier than 2028-09-12 | U7 | Sí | LC | En ventana ±10% | No | 1544 | 1500 | 102.93 |

Notes:
- 259: Unidad U16 · Caldera: No · 4 días de salida (09/07/2028 – 12/07/2028)
- 261: Unidad U2 · Caldera: Sí · 2 días de salida (13/07/2028 – 14/07/2028)
- 263: Unidad U13 · Caldera: No · 7 días de salida (15/07/2028 – 21/07/2028)
- 266: Unidad U4 · Caldera: No · 23 días de salida (22/07/2028 – 13/08/2028)
- 271: Unidad U8 · Caldera: Sí · 2 días de salida (14/08/2028 – 15/08/2028)
- 273: Unidad U12 · Caldera: No · 23 días de salida (16/08/2028 – 07/09/2028)
- 279: Unidad U6 · Caldera: No · 4 días de salida (08/09/2028 – 11/09/2028)
- 281: Unidad U7 · Caldera: Sí · 2 días de salida (12/09/2028 – 13/09/2028)

| ID | WBS | Task | Duration | Start | Finish | Predecessors | Constraint | Unidad | Caldera | Código | Estado | Atraso heredado | Horas al ejecutar | Intervalo (h) | % intervalo |
| --- | --- | --- | --- | --- | --- | --- | --- | --- | --- | --- | --- | --- | --- | --- | --- |
| 283 | 1.3.27 | **Evento 80 — U9 (LC, 3K)** | 5d | 2028-09-14 | 2028-09-18 |  |  | U9 | Sí |  |  |  |  |  |  |
| 284 | 1.3.27.1 | LC — Lavado caldera | 5d | 2028-09-14 | 2028-09-18 | 282 | start no earlier than 2028-09-14 | U9 | Sí | LC | Fuera de ventana | No | 3018 | 1500 | 201.2 |
| 285 | 1.3.27.2 | 3K — Mantenimiento 3k | 5d | 2028-09-14 | 2028-09-18 | 282 | start no earlier than 2028-09-14 | U9 | Sí | 3K | Fuera de ventana | No | 4372 | 3000 | 145.73 |
| 286 | 1.3.28 | **Evento 81 — U15 (LC, 6K, BEB)** | 12d | 2028-09-19 | 2028-09-30 |  |  | U15 | Sí |  |  |  |  |  |  |
| 287 | 1.3.28.1 | LC — Lavado caldera | 12d | 2028-09-19 | 2028-09-30 | 284 | start no earlier than 2028-09-19 | U15 | Sí | LC | Fuera de ventana | No | 3018 | 1500 | 201.2 |
| 288 | 1.3.28.2 | 6K — Mantenimiento 6k | 12d | 2028-09-19 | 2028-09-30 | 284 | start no earlier than 2028-09-19 | U15 | Sí | 6K | Fuera de ventana | No | 7746 | 6000 | 129.1 |
| 289 | 1.3.28.3 | BEB — Horas BEB | 12d | 2028-09-19 | 2028-09-30 | 284 | start no earlier than 2028-09-19 | U15 | Sí | BEB | En ventana ±10% | No | 12902 | 12000 | 107.52 |
| 290 | 1.3.29 | **Evento 82 — U10 (LC, 3K)** | 5d | 2028-10-01 | 2028-10-05 |  |  | U10 | Sí |  |  |  |  |  |  |
| 291 | 1.3.29.1 | LC — Lavado caldera | 5d | 2028-10-01 | 2028-10-05 | 287 | start no earlier than 2028-10-01 | U10 | Sí | LC | Fuera de ventana | No | 2614 | 1500 | 174.27 |
| 292 | 1.3.29.2 | 3K — Mantenimiento 3k | 5d | 2028-10-01 | 2028-10-05 | 287 | start no earlier than 2028-10-01 | U10 | Sí | 3K | Fuera de ventana | No | 4229 | 3000 | 140.97 |
| 293 | 1.3.30 | **Evento 83 — U14 (6K, 3K)** | 7d | 2028-10-06 | 2028-10-12 |  |  | U14 | No |  |  |  |  |  |  |
| 294 | 1.3.30.1 | 6K — Mantenimiento 6k | 7d | 2028-10-06 | 2028-10-12 | 291 | start no earlier than 2028-10-06 | U14 | No | 6K | Fuera de ventana | No | 6804 | 6000 | 113.4 |
| 295 | 1.3.30.2 | 3K — Mantenimiento 3k | 7d | 2028-10-06 | 2028-10-12 | 291 | start no earlier than 2028-10-06 | U14 | No | 3K | Fuera de ventana | No | 3758 | 3000 | 125.27 |
| 296 | 1.3.31 | **Evento 84 — U2 (LC, 3K)** | 5d | 2028-10-13 | 2028-10-17 |  |  | U2 | Sí |  |  |  |  |  |  |
| 297 | 1.3.31.1 | LC — Lavado caldera | 5d | 2028-10-13 | 2028-10-17 | 294 | start no earlier than 2028-10-13 | U2 | Sí | LC | Fuera de ventana | No | 2138 | 1500 | 142.53 |
| 298 | 1.3.31.2 | 3K — Mantenimiento 3k | 5d | 2028-10-13 | 2028-10-17 | 294 | start no earlier than 2028-10-13 | U2 | Sí | 3K | Fuera de ventana | No | 3707 | 3000 | 123.57 |
| 299 | 1.3.32 | **Evento 85 — U8 (LC, 3K)** | 5d | 2028-10-18 | 2028-10-22 |  |  | U8 | Sí |  |  |  |  |  |  |
| 300 | 1.3.32.1 | LC — Lavado caldera | 5d | 2028-10-18 | 2028-10-22 | 297 | start no earlier than 2028-10-18 | U8 | Sí | LC | En ventana ±10% | No | 1497 | 1500 | 99.8 |
| 301 | 1.3.32.2 | 3K — Mantenimiento 3k | 5d | 2028-10-18 | 2028-10-22 | 297 | start no earlier than 2028-10-18 | U8 | Sí | 3K | En ventana ±10% | No | 3113 | 3000 | 103.77 |
| 302 | 1.3.33 | **Evento 86 — U1 (12K, TC, BEB)** | 23d | 2028-10-23 | 2028-11-14 |  |  | U1 | No |  |  |  |  |  |  |
| 303 | 1.3.33.1 | 12K — Mantenimiento 12k (OVH) | 23d | 2028-10-23 | 2028-11-14 | 300 | start no earlier than 2028-10-23 | U1 | No | 12K | En ventana ±10% | No | 13090 | 12000 | 109.08 |
| 304 | 1.3.33.2 | TC — Mantto. turbocargadores | 23d | 2028-10-23 | 2028-11-14 | 300 | start no earlier than 2028-10-23 | U1 | No | TC | En ventana ±10% | No | 13090 | 12000 | 109.08 |
| 305 | 1.3.33.3 | BEB — Horas BEB | 23d | 2028-10-23 | 2028-11-14 | 300 | start no earlier than 2028-10-23 | U1 | No | BEB | En ventana ±10% | No | 13090 | 12000 | 109.08 |
| 306 | 1.3.34 | **Evento 87 — U3 (12K, TC, BEB)** | 23d | 2028-11-15 | 2028-12-07 |  |  | U3 | No |  |  |  |  |  |  |
| 307 | 1.3.34.1 | 12K — Mantenimiento 12k (OVH) | 23d | 2028-11-15 | 2028-12-07 | 303 | start no earlier than 2028-11-15 | U3 | No | 12K | En ventana ±10% | No | 12701 | 12000 | 105.84 |
| 308 | 1.3.34.2 | TC — Mantto. turbocargadores | 23d | 2028-11-15 | 2028-12-07 | 303 | start no earlier than 2028-11-15 | U3 | No | TC | En ventana ±10% | No | 12701 | 12000 | 105.84 |
| 309 | 1.3.34.3 | BEB — Horas BEB | 23d | 2028-11-15 | 2028-12-07 | 303 | start no earlier than 2028-11-15 | U3 | No | BEB | En ventana ±10% | No | 12701 | 12000 | 105.84 |

Notes:
- 283: Unidad U9 · Caldera: Sí · 5 días de salida (14/09/2028 – 18/09/2028)
- 286: Unidad U15 · Caldera: Sí · 12 días de salida (19/09/2028 – 30/09/2028)
- 290: Unidad U10 · Caldera: Sí · 5 días de salida (01/10/2028 – 05/10/2028)
- 293: Unidad U14 · Caldera: No · 7 días de salida (06/10/2028 – 12/10/2028)
- 296: Unidad U2 · Caldera: Sí · 5 días de salida (13/10/2028 – 17/10/2028)
- 299: Unidad U8 · Caldera: Sí · 5 días de salida (18/10/2028 – 22/10/2028)
- 302: Unidad U1 · Caldera: No · 23 días de salida (23/10/2028 – 14/11/2028)
- 306: Unidad U3 · Caldera: No · 23 días de salida (15/11/2028 – 07/12/2028)

| ID | WBS | Task | Duration | Start | Finish | Predecessors | Constraint | Unidad | Caldera | Código | Estado | Atraso heredado | Horas al ejecutar | Intervalo (h) | % intervalo |
| --- | --- | --- | --- | --- | --- | --- | --- | --- | --- | --- | --- | --- | --- | --- | --- |
| 310 | 1.3.35 | **Evento 88 — U15 (LC)** | 2d | 2028-12-08 | 2028-12-09 |  |  | U15 | Sí |  |  |  |  |  |  |
| 311 | 1.3.35.1 | LC — Lavado caldera | 2d | 2028-12-08 | 2028-12-09 | 307 | start no earlier than 2028-12-08 | U15 | Sí | LC | En ventana ±10% | No | 1616 | 1500 | 107.73 |
| 312 | 1.3.36 | **Evento 89 — U7 (LC, 12K, TC, MB, 3K)** | 23d | 2028-12-10 | 2029-01-01 |  |  | U7 | Sí |  |  |  |  |  |  |
| 313 | 1.3.36.1 | LC — Lavado caldera | 23d | 2028-12-10 | 2029-01-01 | 311 | start no earlier than 2028-12-10 | U7 | Sí | LC | Fuera de ventana | No | 2067 | 1500 | 137.8 |
| 314 | 1.3.36.2 | 12K — Mantenimiento 12k (OVH) | 23d | 2028-12-10 | 2029-01-01 | 311 | start no earlier than 2028-12-10 | U7 | Sí | 12K | En ventana ±10% | No | 10930 | 12000 | 91.08 |
| 315 | 1.3.36.3 | TC — Mantto. turbocargadores | 23d | 2028-12-10 | 2029-01-01 | 311 | start no earlier than 2028-12-10 | U7 | Sí | TC | En ventana ±10% | No | 10930 | 12000 | 91.08 |
| 316 | 1.3.36.4 | MB — Cojinetes de bancada MB | 23d | 2028-12-10 | 2029-01-01 | 311 | start no earlier than 2028-12-10 | U7 | Sí | MB | Adelantado | No | 19079 | 24000 | 79.5 |
| 317 | 1.3.36.5 | 3K — Mantenimiento 3k | 23d | 2028-12-10 | 2029-01-01 | 311 | start no earlier than 2028-12-10 | U7 | Sí | 3K | Fuera de ventana | No | 3612 | 3000 | 120.4 |
| 318 | 1.4 | **Año 2029** | 383d | 2029-01-02 | 2030-01-19 |  |  |  |  |  |  |  |  |  |  |
| 319 | 1.4.1 | **Evento 90 — U8 (LC)** | 2d | 2029-01-02 | 2029-01-03 |  |  | U8 | Sí |  |  |  |  |  |  |
| 320 | 1.4.1.1 | LC — Lavado caldera | 2d | 2029-01-02 | 2029-01-03 | 313 | start no earlier than 2029-01-02 | U8 | Sí | LC | Fuera de ventana | No | 1687 | 1500 | 112.47 |
| 321 | 1.4.2 | **Evento 91 — U4 (3K)** | 4d | 2029-01-04 | 2029-01-07 |  |  | U4 | No |  |  |  |  |  |  |
| 322 | 1.4.2.1 | 3K — Mantenimiento 3k | 4d | 2029-01-04 | 2029-01-07 | 320 | start no earlier than 2029-01-04 | U4 | No | 3K | En ventana ±10% | No | 3089 | 3000 | 102.97 |
| 323 | 1.4.3 | **Evento 92 — U11 (12K, TC, BEB, MB, 3K)** | 23d | 2029-01-08 | 2029-01-30 |  |  | U11 | No |  |  |  |  |  |  |
| 324 | 1.4.3.1 | 12K — Mantenimiento 12k (OVH) | 23d | 2029-01-08 | 2029-01-30 | 322 | start no earlier than 2029-01-08 | U11 | No | 12K | En ventana ±10% | No | 12550 | 12000 | 104.58 |
| 325 | 1.4.3.2 | TC — Mantto. turbocargadores | 23d | 2029-01-08 | 2029-01-30 | 322 | start no earlier than 2029-01-08 | U11 | No | TC | En ventana ±10% | No | 12550 | 12000 | 104.58 |
| 326 | 1.4.3.3 | BEB — Horas BEB | 23d | 2029-01-08 | 2029-01-30 | 322 | start no earlier than 2029-01-08 | U11 | No | BEB | En ventana ±10% | No | 12550 | 12000 | 104.58 |
| 327 | 1.4.3.4 | MB — Cojinetes de bancada MB | 23d | 2029-01-08 | 2029-01-30 | 322 | start no earlier than 2029-01-08 | U11 | No | MB | Adelantado | No | 19251 | 24000 | 80.21 |
| 328 | 1.4.3.5 | 3K — Mantenimiento 3k | 23d | 2029-01-08 | 2029-01-30 | 322 | start no earlier than 2029-01-08 | U11 | No | 3K | Fuera de ventana | No | 4277 | 3000 | 142.57 |
| 329 | 1.4.4 | **Evento 93 — U12 (3K)** | 4d | 2029-01-31 | 2029-02-03 |  |  | U12 | No |  |  |  |  |  |  |
| 330 | 1.4.4.1 | 3K — Mantenimiento 3k | 4d | 2029-01-31 | 2029-02-03 | 324 | start no earlier than 2029-01-31 | U12 | No | 3K | En ventana ±10% | No | 3132 | 3000 | 104.4 |
| 331 | 1.4.5 | **Evento 94 — U9 (LC, 6K, BEB)** | 12d | 2029-02-04 | 2029-02-15 |  |  | U9 | Sí |  |  |  |  |  |  |
| 332 | 1.4.5.1 | LC — Lavado caldera | 12d | 2029-02-04 | 2029-02-15 | 330 | start no earlier than 2029-02-04 | U9 | Sí | LC | Fuera de ventana | No | 3279 | 1500 | 218.6 |
| 333 | 1.4.5.2 | 6K — Mantenimiento 6k | 12d | 2029-02-04 | 2029-02-15 | 330 | start no earlier than 2029-02-04 | U9 | Sí | 6K | Fuera de ventana | No | 7651 | 6000 | 127.52 |
| 334 | 1.4.5.3 | BEB — Horas BEB | 12d | 2029-02-04 | 2029-02-15 | 330 | start no earlier than 2029-02-04 | U9 | Sí | BEB | En ventana ±10% | No | 11737 | 12000 | 97.81 |

Notes:
- 310: Unidad U15 · Caldera: Sí · 2 días de salida (08/12/2028 – 09/12/2028)
- 312: Unidad U7 · Caldera: Sí · 23 días de salida (10/12/2028 – 01/01/2029)
- 319: Unidad U8 · Caldera: Sí · 2 días de salida (02/01/2029 – 03/01/2029)
- 321: Unidad U4 · Caldera: No · 4 días de salida (04/01/2029 – 07/01/2029)
- 323: Unidad U11 · Caldera: No · 23 días de salida (08/01/2029 – 30/01/2029)
- 329: Unidad U12 · Caldera: No · 4 días de salida (31/01/2029 – 03/02/2029)
- 331: Unidad U9 · Caldera: Sí · 12 días de salida (04/02/2029 – 15/02/2029)

| ID | WBS | Task | Duration | Start | Finish | Predecessors | Constraint | Unidad | Caldera | Código | Estado | Atraso heredado | Horas al ejecutar | Intervalo (h) | % intervalo |
| --- | --- | --- | --- | --- | --- | --- | --- | --- | --- | --- | --- | --- | --- | --- | --- |
| 335 | 1.4.6 | **Evento 95 — U5 (12K, TC, BEB, MB, 3K)** | 23d | 2029-02-16 | 2029-03-10 |  |  | U5 | No |  |  |  |  |  |  |
| 336 | 1.4.6.1 | 12K — Mantenimiento 12k (OVH) | 23d | 2029-02-16 | 2029-03-10 | 332 | start no earlier than 2029-02-16 | U5 | No | 12K | En ventana ±10% | No | 12809 | 12000 | 106.74 |
| 337 | 1.4.6.2 | TC — Mantto. turbocargadores | 23d | 2029-02-16 | 2029-03-10 | 332 | start no earlier than 2029-02-16 | U5 | No | TC | En ventana ±10% | No | 12809 | 12000 | 106.74 |
| 338 | 1.4.6.3 | BEB — Horas BEB | 23d | 2029-02-16 | 2029-03-10 | 332 | start no earlier than 2029-02-16 | U5 | No | BEB | En ventana ±10% | No | 12809 | 12000 | 106.74 |
| 339 | 1.4.6.4 | MB — Cojinetes de bancada MB | 23d | 2029-02-16 | 2029-03-10 | 332 | start no earlier than 2029-02-16 | U5 | No | MB | Adelantado | No | 20023 | 24000 | 83.43 |
| 340 | 1.4.6.5 | 3K — Mantenimiento 3k | 23d | 2029-02-16 | 2029-03-10 | 332 | start no earlier than 2029-02-16 | U5 | No | 3K | Fuera de ventana | No | 4968 | 3000 | 165.6 |
| 341 | 1.4.7 | **Evento 96 — U7 (LC)** | 2d | 2029-03-11 | 2029-03-12 |  |  | U7 | Sí |  |  |  |  |  |  |
| 342 | 1.4.7.1 | LC — Lavado caldera | 2d | 2029-03-11 | 2029-03-12 | 336 | start no earlier than 2029-03-11 | U7 | Sí | LC | En ventana ±10% | No | 1616 | 1500 | 107.73 |
| 343 | 1.4.8 | **Evento 97 — U1 (3K)** | 4d | 2029-03-13 | 2029-03-16 |  |  | U1 | No |  |  |  |  |  |  |
| 344 | 1.4.8.1 | 3K — Mantenimiento 3k | 4d | 2029-03-13 | 2029-03-16 | 342 | start no earlier than 2029-03-13 | U1 | No | 3K | Adelantado | No | 2549 | 3000 | 84.97 |
| 345 | 1.4.9 | **Evento 98 — U16 (6K, 3K)** | 7d | 2029-03-17 | 2029-03-23 |  |  | U16 | No |  |  |  |  |  |  |
| 346 | 1.4.9.1 | 6K — Mantenimiento 6k | 7d | 2029-03-17 | 2029-03-23 | 344 | start no earlier than 2029-03-17 | U16 | No | 6K | Fuera de ventana | No | 8618 | 6000 | 143.63 |
| 347 | 1.4.9.2 | 3K — Mantenimiento 3k | 7d | 2029-03-17 | 2029-03-23 | 344 | start no earlier than 2029-03-17 | U16 | No | 3K | Fuera de ventana | No | 5335 | 3000 | 177.83 |
| 348 | 1.4.10 | **Evento 99 — U13 (12K, TC, BEB, MB, 3K)** | 23d | 2029-03-24 | 2029-04-15 |  |  | U13 | No |  |  |  |  |  |  |
| 349 | 1.4.10.1 | 12K — Mantenimiento 12k (OVH) | 23d | 2029-03-24 | 2029-04-15 | 346 | start no earlier than 2029-03-24 | U13 | No | 12K | En ventana ±10% | No | 13003 | 12000 | 108.36 |
| 350 | 1.4.10.2 | TC — Mantto. turbocargadores | 23d | 2029-03-24 | 2029-04-15 | 346 | start no earlier than 2029-03-24 | U13 | No | TC | En ventana ±10% | No | 13003 | 12000 | 108.36 |
| 351 | 1.4.10.3 | BEB — Horas BEB | 23d | 2029-03-24 | 2029-04-15 | 346 | start no earlier than 2029-03-24 | U13 | No | BEB | En ventana ±10% | No | 13003 | 12000 | 108.36 |
| 352 | 1.4.10.4 | MB — Cojinetes de bancada MB | 23d | 2029-03-24 | 2029-04-15 | 346 | start no earlier than 2029-03-24 | U13 | No | MB | En ventana ±10% | No | 24717 | 24000 | 102.99 |
| 353 | 1.4.10.5 | 3K — Mantenimiento 3k | 23d | 2029-03-24 | 2029-04-15 | 346 | start no earlier than 2029-03-24 | U13 | No | 3K | Fuera de ventana | No | 5292 | 3000 | 176.4 |
| 354 | 1.4.11 | **Evento 100 — U10 (LC, 6K, 3K)** | 8d | 2029-04-16 | 2029-04-23 |  |  | U10 | Sí |  |  |  |  |  |  |
| 355 | 1.4.11.1 | LC — Lavado caldera | 8d | 2029-04-16 | 2029-04-23 | 349 | start no earlier than 2029-04-16 | U10 | Sí | LC | Fuera de ventana | No | 4562 | 1500 | 304.13 |
| 356 | 1.4.11.2 | 6K — Mantenimiento 6k | 8d | 2029-04-16 | 2029-04-23 | 349 | start no earlier than 2029-04-16 | U10 | Sí | 6K | Fuera de ventana | No | 8791 | 6000 | 146.52 |
| 357 | 1.4.11.3 | 3K — Mantenimiento 3k | 8d | 2029-04-16 | 2029-04-23 | 349 | start no earlier than 2029-04-16 | U10 | Sí | 3K | Fuera de ventana | No | 4562 | 3000 | 152.07 |
| 358 | 1.4.12 | **Evento 101 — U12 (6K)** | 7d | 2029-04-24 | 2029-04-30 |  |  | U12 | No |  |  |  |  |  |  |
| 359 | 1.4.12.1 | 6K — Mantenimiento 6k | 7d | 2029-04-24 | 2029-04-30 | 355 | start no earlier than 2029-04-24 | U12 | No | 6K | Adelantado | No | 4838 | 6000 | 80.63 |

Notes:
- 335: Unidad U5 · Caldera: No · 23 días de salida (16/02/2029 – 10/03/2029)
- 341: Unidad U7 · Caldera: Sí · 2 días de salida (11/03/2029 – 12/03/2029)
- 343: Unidad U1 · Caldera: No · 4 días de salida (13/03/2029 – 16/03/2029)
- 345: Unidad U16 · Caldera: No · 7 días de salida (17/03/2029 – 23/03/2029)
- 348: Unidad U13 · Caldera: No · 23 días de salida (24/03/2029 – 15/04/2029)
- 354: Unidad U10 · Caldera: Sí · 8 días de salida (16/04/2029 – 23/04/2029)
- 358: Unidad U12 · Caldera: No · 7 días de salida (24/04/2029 – 30/04/2029)

| ID | WBS | Task | Duration | Start | Finish | Predecessors | Constraint | Unidad | Caldera | Código | Estado | Atraso heredado | Horas al ejecutar | Intervalo (h) | % intervalo |
| --- | --- | --- | --- | --- | --- | --- | --- | --- | --- | --- | --- | --- | --- | --- | --- |
| 360 | 1.4.13 | **Evento 102 — U3 (3K)** | 4d | 2029-05-01 | 2029-05-04 |  |  | U3 | No |  |  |  |  |  |  |
| 361 | 1.4.13.1 | 3K — Mantenimiento 3k | 4d | 2029-05-01 | 2029-05-04 | 359 | start no earlier than 2029-05-01 | U3 | No | 3K | En ventana ±10% | No | 3110 | 3000 | 103.67 |
| 362 | 1.4.14 | **Evento 103 — U2 (LC, 6K, BEB, 3K)** | 12d | 2029-05-05 | 2029-05-16 |  |  | U2 | Sí |  |  |  |  |  |  |
| 363 | 1.4.14.1 | LC — Lavado caldera | 12d | 2029-05-05 | 2029-05-16 | 361 | start no earlier than 2029-05-05 | U2 | Sí | LC | Fuera de ventana | No | 4728 | 1500 | 315.2 |
| 364 | 1.4.14.2 | 6K — Mantenimiento 6k | 12d | 2029-05-05 | 2029-05-16 | 361 | start no earlier than 2029-05-05 | U2 | Sí | 6K | Fuera de ventana | No | 8435 | 6000 | 140.58 |
| 365 | 1.4.14.3 | BEB — Horas BEB | 12d | 2029-05-05 | 2029-05-16 | 361 | start no earlier than 2029-05-05 | U2 | Sí | BEB | En ventana ±10% | No | 13116 | 12000 | 109.3 |
| 366 | 1.4.14.4 | 3K — Mantenimiento 3k | 12d | 2029-05-05 | 2029-05-16 | 361 | start no earlier than 2029-05-05 | U2 | Sí | 3K | Fuera de ventana | No | 4728 | 3000 | 157.6 |
| 367 | 1.4.15 | **Evento 104 — U15 (LC, 12K, TC, MB, 3K)** | 23d | 2029-05-17 | 2029-06-08 |  |  | U15 | Sí |  |  |  |  |  |  |
| 368 | 1.4.15.1 | LC — Lavado caldera | 23d | 2029-05-17 | 2029-06-08 | 363 | start no earlier than 2029-05-17 | U15 | Sí | LC | Fuera de ventana | No | 3754 | 1500 | 250.27 |
| 369 | 1.4.15.2 | 12K — Mantenimiento 12k (OVH) | 23d | 2029-05-17 | 2029-06-08 | 363 | start no earlier than 2029-05-17 | U15 | Sí | 12K | En ventana ±10% | No | 13116 | 12000 | 109.3 |
| 370 | 1.4.15.3 | TC — Mantto. turbocargadores | 23d | 2029-05-17 | 2029-06-08 | 363 | start no earlier than 2029-05-17 | U15 | Sí | TC | En ventana ±10% | No | 13116 | 12000 | 109.3 |
| 371 | 1.4.15.4 | MB — Cojinetes de bancada MB | 23d | 2029-05-17 | 2029-06-08 | 363 | start no earlier than 2029-05-17 | U15 | Sí | MB | En ventana ±10% | No | 24391 | 24000 | 101.63 |
| 372 | 1.4.15.5 | 3K — Mantenimiento 3k | 23d | 2029-05-17 | 2029-06-08 | 363 | start no earlier than 2029-05-17 | U15 | Sí | 3K | Fuera de ventana | No | 5370 | 3000 | 179 |
| 373 | 1.4.16 | **Evento 105 — U4 (6K, MB)** | 11d | 2029-06-09 | 2029-06-19 |  |  | U4 | No |  |  |  |  |  |  |
| 374 | 1.4.16.1 | 6K — Mantenimiento 6k | 11d | 2029-06-09 | 2029-06-19 | 368 | start no earlier than 2029-06-09 | U4 | No | 6K | En ventana ±10% | No | 6372 | 6000 | 106.2 |
| 375 | 1.4.16.2 | MB — Cojinetes de bancada MB | 11d | 2029-06-09 | 2029-06-19 | 368 | start no earlier than 2029-06-09 | U4 | No | MB | En ventana ±10% | No | 22439 | 24000 | 93.5 |
| 376 | 1.4.17 | **Evento 106 — U8 (LC, 6K, MB, 3K)** | 12d | 2029-06-20 | 2029-07-01 |  |  | U8 | Sí |  |  |  |  |  |  |
| 377 | 1.4.17.1 | LC — Lavado caldera | 12d | 2029-06-20 | 2029-07-01 | 374 | start no earlier than 2029-06-20 | U8 | Sí | LC | Fuera de ventana | No | 3968 | 1500 | 264.53 |
| 378 | 1.4.17.2 | 6K — Mantenimiento 6k | 12d | 2029-06-20 | 2029-07-01 | 374 | start no earlier than 2029-06-20 | U8 | Sí | 6K | Fuera de ventana | No | 8767 | 6000 | 146.12 |
| 379 | 1.4.17.3 | MB — Cojinetes de bancada MB | 12d | 2029-06-20 | 2029-07-01 | 374 | start no earlier than 2029-06-20 | U8 | Sí | MB | En ventana ±10% | No | 22976 | 24000 | 95.73 |
| 380 | 1.4.17.4 | 3K — Mantenimiento 3k | 12d | 2029-06-20 | 2029-07-01 | 374 | start no earlier than 2029-06-20 | U8 | Sí | 3K | Fuera de ventana | No | 5655 | 3000 | 188.5 |
| 381 | 1.4.18 | **Evento 107 — U11 (3K)** | 4d | 2029-07-02 | 2029-07-05 |  |  | U11 | No |  |  |  |  |  |  |
| 382 | 1.4.18.1 | 3K — Mantenimiento 3k | 4d | 2029-07-02 | 2029-07-05 | 377 | start no earlier than 2029-07-02 | U11 | No | 3K | En ventana ±10% | No | 3283 | 3000 | 109.43 |
| 383 | 1.4.19 | **Evento 108 — U6 (12K, TC, BEB, 6K, 3K)** | 23d | 2029-07-06 | 2029-07-28 |  |  | U6 | No |  |  |  |  |  |  |
| 384 | 1.4.19.1 | 12K — Mantenimiento 12k (OVH) | 23d | 2029-07-06 | 2029-07-28 | 382 | start no earlier than 2029-07-06 | U6 | No | 12K | Fuera de ventana | No | 16956 | 12000 | 141.3 |
| 385 | 1.4.19.2 | TC — Mantto. turbocargadores | 23d | 2029-07-06 | 2029-07-28 | 382 | start no earlier than 2029-07-06 | U6 | No | TC | Fuera de ventana | No | 16956 | 12000 | 141.3 |
| 386 | 1.4.19.3 | BEB — Horas BEB | 23d | 2029-07-06 | 2029-07-28 | 382 | start no earlier than 2029-07-06 | U6 | No | BEB | Fuera de ventana | No | 16956 | 12000 | 141.3 |
| 387 | 1.4.19.4 | 6K — Mantenimiento 6k | 23d | 2029-07-06 | 2029-07-28 | 382 | start no earlier than 2029-07-06 | U6 | No | 6K | Fuera de ventana | No | 9655 | 6000 | 160.92 |
| 388 | 1.4.19.5 | 3K — Mantenimiento 3k | 23d | 2029-07-06 | 2029-07-28 | 382 | start no earlier than 2029-07-06 | U6 | No | 3K | Fuera de ventana | No | 6415 | 3000 | 213.83 |

Notes:
- 360: Unidad U3 · Caldera: No · 4 días de salida (01/05/2029 – 04/05/2029)
- 362: Unidad U2 · Caldera: Sí · 12 días de salida (05/05/2029 – 16/05/2029)
- 367: Unidad U15 · Caldera: Sí · 23 días de salida (17/05/2029 – 08/06/2029)
- 373: Unidad U4 · Caldera: No · 11 días de salida (09/06/2029 – 19/06/2029)
- 376: Unidad U8 · Caldera: Sí · 12 días de salida (20/06/2029 – 01/07/2029)
- 381: Unidad U11 · Caldera: No · 4 días de salida (02/07/2029 – 05/07/2029)
- 383: Unidad U6 · Caldera: No · 23 días de salida (06/07/2029 – 28/07/2029)

| ID | WBS | Task | Duration | Start | Finish | Predecessors | Constraint | Unidad | Caldera | Código | Estado | Atraso heredado | Horas al ejecutar | Intervalo (h) | % intervalo |
| --- | --- | --- | --- | --- | --- | --- | --- | --- | --- | --- | --- | --- | --- | --- | --- |
| 389 | 1.4.20 | **Evento 109 — U15 (LC)** | 2d | 2029-07-29 | 2029-07-30 |  |  | U15 | Sí |  |  |  |  |  |  |
| 390 | 1.4.20.1 | LC — Lavado caldera | 2d | 2029-07-29 | 2029-07-30 | 384 | start no earlier than 2029-07-29 | U15 | Sí | LC | Adelantado | No | 1188 | 1500 | 79.2 |
| 391 | 1.4.21 | **Evento 110 — U5 (3K)** | 4d | 2029-07-31 | 2029-08-03 |  |  | U5 | No |  |  |  |  |  |  |
| 392 | 1.4.21.1 | 3K — Mantenimiento 3k | 4d | 2029-07-31 | 2029-08-03 | 390 | start no earlier than 2029-07-31 | U5 | No | 3K | En ventana ±10% | No | 3067 | 3000 | 102.23 |
| 393 | 1.4.22 | **Evento 111 — U14 (12K, TC, BEB, MB, 3K)** | 23d | 2029-08-04 | 2029-08-26 |  |  | U14 | No |  |  |  |  |  |  |
| 394 | 1.4.22.1 | 12K — Mantenimiento 12k (OVH) | 23d | 2029-08-04 | 2029-08-26 | 392 | start no earlier than 2029-08-04 | U14 | No | 12K | En ventana ±10% | No | 13176 | 12000 | 109.8 |
| 395 | 1.4.22.2 | TC — Mantto. turbocargadores | 23d | 2029-08-04 | 2029-08-26 | 392 | start no earlier than 2029-08-04 | U14 | No | TC | En ventana ±10% | No | 13176 | 12000 | 109.8 |
| 396 | 1.4.22.3 | BEB — Horas BEB | 23d | 2029-08-04 | 2029-08-26 | 392 | start no earlier than 2029-08-04 | U14 | No | BEB | En ventana ±10% | No | 13176 | 12000 | 109.8 |
| 397 | 1.4.22.4 | MB — Cojinetes de bancada MB | 23d | 2029-08-04 | 2029-08-26 | 392 | start no earlier than 2029-08-04 | U14 | No | MB | En ventana ±10% | No | 25454 | 24000 | 106.06 |
| 398 | 1.4.22.5 | 3K — Mantenimiento 3k | 23d | 2029-08-04 | 2029-08-26 | 392 | start no earlier than 2029-08-04 | U14 | No | 3K | Fuera de ventana | No | 6372 | 3000 | 212.4 |
| 399 | 1.4.23 | **Evento 112 — U13 (3K)** | 4d | 2029-08-27 | 2029-08-30 |  |  | U13 | No |  |  |  |  |  |  |
| 400 | 1.4.23.1 | 3K — Mantenimiento 3k | 4d | 2029-08-27 | 2029-08-30 | 394 | start no earlier than 2029-08-27 | U13 | No | 3K | En ventana ±10% | No | 2873 | 3000 | 95.77 |
| 401 | 1.4.24 | **Evento 113 — U9 (LC, 12K, TC, MB, 3K)** | 23d | 2029-08-31 | 2029-09-22 |  |  | U9 | Sí |  |  |  |  |  |  |
| 402 | 1.4.24.1 | LC — Lavado caldera | 23d | 2029-08-31 | 2029-09-22 | 400 | start no earlier than 2029-08-31 | U9 | Sí | LC | Fuera de ventana | No | 4657 | 1500 | 310.47 |
| 403 | 1.4.24.2 | 12K — Mantenimiento 12k (OVH) | 23d | 2029-08-31 | 2029-09-22 | 400 | start no earlier than 2029-08-31 | U9 | Sí | 12K | En ventana ±10% | No | 12308 | 12000 | 102.57 |
| 404 | 1.4.24.3 | TC — Mantto. turbocargadores | 23d | 2029-08-31 | 2029-09-22 | 400 | start no earlier than 2029-08-31 | U9 | Sí | TC | En ventana ±10% | No | 12308 | 12000 | 102.57 |
| 405 | 1.4.24.4 | MB — Cojinetes de bancada MB | 23d | 2029-08-31 | 2029-09-22 | 400 | start no earlier than 2029-08-31 | U9 | Sí | MB | En ventana ±10% | No | 25566 | 24000 | 106.53 |
| 406 | 1.4.24.5 | 3K — Mantenimiento 3k | 23d | 2029-08-31 | 2029-09-22 | 400 | start no earlier than 2029-08-31 | U9 | Sí | 3K | Fuera de ventana | No | 4657 | 3000 | 155.23 |
| 407 | 1.4.25 | **Evento 114 — U12 (3K)** | 4d | 2029-09-23 | 2029-09-26 |  |  | U12 | No |  |  |  |  |  |  |
| 408 | 1.4.25.1 | 3K — Mantenimiento 3k | 4d | 2029-09-23 | 2029-09-26 | 402 | start no earlier than 2029-09-23 | U12 | No | 3K | En ventana ±10% | No | 3132 | 3000 | 104.4 |
| 409 | 1.4.26 | **Evento 115 — U15 (LC)** | 2d | 2029-09-27 | 2029-09-28 |  |  | U15 | Sí |  |  |  |  |  |  |
| 410 | 1.4.26.1 | LC — Lavado caldera | 2d | 2029-09-27 | 2029-09-28 | 408 | start no earlier than 2029-09-27 | U15 | Sí | LC | En ventana ±10% | No | 1378 | 1500 | 91.87 |
| 411 | 1.4.27 | **Evento 116 — U3 (6K)** | 7d | 2029-09-29 | 2029-10-05 |  |  | U3 | No |  |  |  |  |  |  |
| 412 | 1.4.27.1 | 6K — Mantenimiento 6k | 7d | 2029-09-29 | 2029-10-05 | 410 | start no earlier than 2029-09-29 | U3 | No | 6K | En ventana ±10% | No | 6286 | 6000 | 104.77 |

Notes:
- 389: Unidad U15 · Caldera: Sí · 2 días de salida (29/07/2029 – 30/07/2029)
- 391: Unidad U5 · Caldera: No · 4 días de salida (31/07/2029 – 03/08/2029)
- 393: Unidad U14 · Caldera: No · 23 días de salida (04/08/2029 – 26/08/2029)
- 399: Unidad U13 · Caldera: No · 4 días de salida (27/08/2029 – 30/08/2029)
- 401: Unidad U9 · Caldera: Sí · 23 días de salida (31/08/2029 – 22/09/2029)
- 407: Unidad U12 · Caldera: No · 4 días de salida (23/09/2029 – 26/09/2029)
- 409: Unidad U15 · Caldera: Sí · 2 días de salida (27/09/2029 – 28/09/2029)
- 411: Unidad U3 · Caldera: No · 7 días de salida (29/09/2029 – 05/10/2029)

| ID | WBS | Task | Duration | Start | Finish | Predecessors | Constraint | Unidad | Caldera | Código | Estado | Atraso heredado | Horas al ejecutar | Intervalo (h) | % intervalo |
| --- | --- | --- | --- | --- | --- | --- | --- | --- | --- | --- | --- | --- | --- | --- | --- |
| 413 | 1.4.28 | **Evento 117 — U7 (LC, 6K, BEB, 3K)** | 12d | 2029-10-06 | 2029-10-17 |  |  | U7 | Sí |  |  |  |  |  |  |
| 414 | 1.4.28.1 | LC — Lavado caldera | 12d | 2029-10-06 | 2029-10-17 | 412 | start no earlier than 2029-10-06 | U7 | Sí | LC | Fuera de ventana | No | 4918 | 1500 | 327.87 |
| 415 | 1.4.28.2 | 6K — Mantenimiento 6k | 12d | 2029-10-06 | 2029-10-17 | 412 | start no earlier than 2029-10-06 | U7 | Sí | 6K | En ventana ±10% | No | 6534 | 6000 | 108.9 |
| 416 | 1.4.28.3 | BEB — Horas BEB | 12d | 2029-10-06 | 2029-10-17 | 412 | start no earlier than 2029-10-06 | U7 | Sí | BEB | Fuera de ventana | No | 13329 | 12000 | 111.07 |
| 417 | 1.4.28.4 | 3K — Mantenimiento 3k | 12d | 2029-10-06 | 2029-10-17 | 412 | start no earlier than 2029-10-06 | U7 | Sí | 3K | Fuera de ventana | No | 6534 | 3000 | 217.8 |
| 418 | 1.4.29 | **Evento 118 — U15 (3K)** | 4d | 2029-10-18 | 2029-10-21 |  |  | U15 | Sí |  |  |  |  |  |  |
| 419 | 1.4.29.1 | 3K — Mantenimiento 3k | 4d | 2029-10-18 | 2029-10-21 | 414 | start no earlier than 2029-10-18 | U15 | Sí | 3K | En ventana ±10% | No | 3018 | 3000 | 100.6 |
| 420 | 1.4.30 | **Evento 119 — U10 (LC, 12K, TC, BEB, MB, 3K)** | 23d | 2029-10-22 | 2029-11-13 |  |  | U10 | Sí |  |  |  |  |  |  |
| 421 | 1.4.30.1 | LC — Lavado caldera | 23d | 2029-10-22 | 2029-11-13 | 419 | start no earlier than 2029-10-22 | U10 | Sí | LC | Fuera de ventana | No | 4301 | 1500 | 286.73 |
| 422 | 1.4.30.2 | 12K — Mantenimiento 12k (OVH) | 23d | 2029-10-22 | 2029-11-13 | 419 | start no earlier than 2029-10-22 | U10 | Sí | 12K | En ventana ±10% | No | 13092 | 12000 | 109.1 |
| 423 | 1.4.30.3 | TC — Mantto. turbocargadores | 23d | 2029-10-22 | 2029-11-13 | 419 | start no earlier than 2029-10-22 | U10 | Sí | TC | En ventana ±10% | No | 13092 | 12000 | 109.1 |
| 424 | 1.4.30.4 | BEB — Horas BEB | 23d | 2029-10-22 | 2029-11-13 | 419 | start no earlier than 2029-10-22 | U10 | Sí | BEB | En ventana ±10% | No | 13092 | 12000 | 109.1 |
| 425 | 1.4.30.5 | MB — Cojinetes de bancada MB | 23d | 2029-10-22 | 2029-11-13 | 419 | start no earlier than 2029-10-22 | U10 | Sí | MB | En ventana ±10% | No | 25685 | 24000 | 107.02 |
| 426 | 1.4.30.6 | 3K — Mantenimiento 3k | 23d | 2029-10-22 | 2029-11-13 | 419 | start no earlier than 2029-10-22 | U10 | Sí | 3K | Fuera de ventana | No | 4301 | 3000 | 143.37 |
| 427 | 1.4.31 | **Evento 120 — U11 (6K)** | 7d | 2029-11-14 | 2029-11-20 |  |  | U11 | No |  |  |  |  |  |  |
| 428 | 1.4.31.1 | 6K — Mantenimiento 6k | 7d | 2029-11-14 | 2029-11-20 | 421 | start no earlier than 2029-11-14 | U11 | No | 6K | En ventana ±10% | No | 6113 | 6000 | 101.88 |
| 429 | 1.4.32 | **Evento 121 — U4 (3K)** | 4d | 2029-11-21 | 2029-11-24 |  |  | U4 | No |  |  |  |  |  |  |
| 430 | 1.4.32.1 | 3K — Mantenimiento 3k | 4d | 2029-11-21 | 2029-11-24 | 428 | start no earlier than 2029-11-21 | U4 | No | 3K | Fuera de ventana | No | 3326 | 3000 | 110.87 |
| 431 | 1.4.33 | **Evento 122 — U9 (LC)** | 2d | 2029-11-25 | 2029-11-26 |  |  | U9 | Sí |  |  |  |  |  |  |
| 432 | 1.4.33.1 | LC — Lavado caldera | 2d | 2029-11-25 | 2029-11-26 | 430 | start no earlier than 2029-11-25 | U9 | Sí | LC | En ventana ±10% | No | 1497 | 1500 | 99.8 |
| 433 | 1.4.34 | **Evento 123 — U2 (LC, 12K, TC, MB, 3K)** | 23d | 2029-11-27 | 2029-12-19 |  |  | U2 | Sí |  |  |  |  |  |  |
| 434 | 1.4.34.1 | LC — Lavado caldera | 23d | 2029-11-27 | 2029-12-19 | 432 | start no earlier than 2029-11-27 | U2 | Sí | LC | Fuera de ventana | No | 4609 | 1500 | 307.27 |
| 435 | 1.4.34.2 | 12K — Mantenimiento 12k (OVH) | 23d | 2029-11-27 | 2029-12-19 | 432 | start no earlier than 2029-11-27 | U2 | Sí | 12K | En ventana ±10% | No | 13044 | 12000 | 108.7 |
| 436 | 1.4.34.3 | TC — Mantto. turbocargadores | 23d | 2029-11-27 | 2029-12-19 | 432 | start no earlier than 2029-11-27 | U2 | Sí | TC | En ventana ±10% | No | 13044 | 12000 | 108.7 |
| 437 | 1.4.34.4 | MB — Cojinetes de bancada MB | 23d | 2029-11-27 | 2029-12-19 | 432 | start no earlier than 2029-11-27 | U2 | Sí | MB | En ventana ±10% | No | 25613 | 24000 | 106.72 |
| 438 | 1.4.34.5 | 3K — Mantenimiento 3k | 23d | 2029-11-27 | 2029-12-19 | 432 | start no earlier than 2029-11-27 | U2 | Sí | 3K | Fuera de ventana | No | 4609 | 3000 | 153.63 |

Notes:
- 413: Unidad U7 · Caldera: Sí · 12 días de salida (06/10/2029 – 17/10/2029)
- 418: Unidad U15 · Caldera: Sí · 4 días de salida (18/10/2029 – 21/10/2029)
- 420: Unidad U10 · Caldera: Sí · 23 días de salida (22/10/2029 – 13/11/2029)
- 427: Unidad U11 · Caldera: No · 7 días de salida (14/11/2029 – 20/11/2029)
- 429: Unidad U4 · Caldera: No · 4 días de salida (21/11/2029 – 24/11/2029)
- 431: Unidad U9 · Caldera: Sí · 2 días de salida (25/11/2029 – 26/11/2029)
- 433: Unidad U2 · Caldera: Sí · 23 días de salida (27/11/2029 – 19/12/2029)

| ID | WBS | Task | Duration | Start | Finish | Predecessors | Constraint | Unidad | Caldera | Código | Estado | Atraso heredado | Horas al ejecutar | Intervalo (h) | % intervalo |
| --- | --- | --- | --- | --- | --- | --- | --- | --- | --- | --- | --- | --- | --- | --- | --- |
| 439 | 1.4.35 | **Evento 124 — U15 (LC)** | 2d | 2029-12-20 | 2029-12-21 |  |  | U15 | Sí |  |  |  |  |  |  |
| 440 | 1.4.35.1 | LC — Lavado caldera | 2d | 2029-12-20 | 2029-12-21 | 434 | start no earlier than 2029-12-20 | U15 | Sí | LC | Fuera de ventana | No | 1853 | 1500 | 123.53 |
| 441 | 1.4.36 | **Evento 125 — U7 (LC)** | 2d | 2029-12-22 | 2029-12-23 |  |  | U7 | Sí |  |  |  |  |  |  |
| 442 | 1.4.36.1 | LC — Lavado caldera | 2d | 2029-12-22 | 2029-12-23 | 440 | start no earlier than 2029-12-22 | U7 | Sí | LC | En ventana ±10% | No | 1544 | 1500 | 102.93 |
| 443 | 1.4.37 | **Evento 126 — U6 (3K)** | 4d | 2029-12-24 | 2029-12-27 |  |  | U6 | No |  |  |  |  |  |  |
| 444 | 1.4.37.1 | 3K — Mantenimiento 3k | 4d | 2029-12-24 | 2029-12-27 | 442 | start no earlier than 2029-12-24 | U6 | No | 3K | En ventana ±10% | No | 3197 | 3000 | 106.57 |
| 445 | 1.4.38 | **Evento 127 — U16 (12K, TC, BEB, MB, 3K)** | 23d | 2029-12-28 | 2030-01-19 |  |  | U16 | No |  |  |  |  |  |  |
| 446 | 1.4.38.1 | 12K — Mantenimiento 12k (OVH) | 23d | 2029-12-28 | 2030-01-19 | 444 | start no earlier than 2029-12-28 | U16 | No | 12K | Fuera de ventana | No | 14645 | 12000 | 122.04 |
| 447 | 1.4.38.2 | TC — Mantto. turbocargadores | 23d | 2029-12-28 | 2030-01-19 | 444 | start no earlier than 2029-12-28 | U16 | No | TC | Fuera de ventana | No | 14645 | 12000 | 122.04 |
| 448 | 1.4.38.3 | BEB — Horas BEB | 23d | 2029-12-28 | 2030-01-19 | 444 | start no earlier than 2029-12-28 | U16 | No | BEB | Fuera de ventana | No | 15379 | 12000 | 128.16 |
| 449 | 1.4.38.4 | MB — Cojinetes de bancada MB | 23d | 2029-12-28 | 2030-01-19 | 444 | start no earlier than 2029-12-28 | U16 | No | MB | En ventana ±10% | No | 23738 | 24000 | 98.91 |
| 450 | 1.4.38.5 | 3K — Mantenimiento 3k | 23d | 2029-12-28 | 2030-01-19 | 444 | start no earlier than 2029-12-28 | U16 | No | 3K | Fuera de ventana | No | 6026 | 3000 | 200.87 |

Notes:
- 439: Unidad U15 · Caldera: Sí · 2 días de salida (20/12/2029 – 21/12/2029)
- 441: Unidad U7 · Caldera: Sí · 2 días de salida (22/12/2029 – 23/12/2029)
- 443: Unidad U6 · Caldera: No · 4 días de salida (24/12/2029 – 27/12/2029)
- 445: Unidad U16 · Caldera: No · 23 días de salida (28/12/2029 – 19/01/2030)
